# Cronograma-CONVENIOS 22-23_FOGAPRYD_VF

Schedule from MS Project, 2022-11-28 to 2024-07-24.

## Calendars

- Estándar: Mon-Fri 08:00-13:00, 14:00-17:00; Sat-Sun off.

## Resources

| Resource |
| --- |
| Acta |
| Acta Entrega-Recepción Provisional |
| Acta Entrega-Recepción Definitiva |

## Schedule

| ID | WBS | Task | Type | Duration | Start | Finish | Predecessors | Total slack | Free slack | Constraint | Resources | Work |
| --- | --- | --- | --- | --- | --- | --- | --- | --- | --- | --- | --- | --- |
| 1 | 1 | CONVENIOS 2022 | manual | 1d? | 2023-02-15 | 2023-02-15 |  |  |  |  |  |  |
| 2 | 2 | **PROYECTO CONSTRUCCIÓN DEL SISTEMA DE AGUA POTABLE PARA LAS COMUNIDADES DE SANTA MARIANITA, LA DOLOROSA Y MINAS CHUQUI ALTO, CANTÓN PUCARÁ, PROVINCIA DEL AZUAY** |  | 295d | 2022-11-28 | 2024-01-12 |  | 137.12d |  |  |  | 2160h |
| 3 | 2.1 | **Parte GAD** |  | 295d | 2022-11-28 | 2024-01-12 |  | 137.12d |  |  |  | 2160h |
| 4 | 2.1.1 | **Ejecución del convenio obra** |  | 295d | 2022-11-28 | 2024-01-12 |  | 137.12d |  |  |  | 2160h |
| 5 | 2.1.1.1 | **Etapa preparatoria obra** |  | 45d | 2022-11-28 | 2023-01-27 |  | 137.12d |  |  |  |  |
| 6 | 2.1.1.1.1 | Elaboración de los documentos habilitantes (informe necesidad, pliegos, presupuesto, TDR, certificación presupuestaria en torno al GAD) |  | 45d | 2022-11-28 | 2023-01-27 |  | 137.12d | 0d | finish no earlier than 2023-01-27 |  |  |
| 7 | 2.1.1.2 | **Etapa precontractual obra** |  | 20d | 2023-01-30 | 2023-02-24 |  | 137.12d |  |  |  |  |
| 8 | 2.1.1.2.1 | Proceso pre adjudicial (subida al portal hasta calificación) |  | 10d | 2023-01-30 | 2023-02-10 | 6 | 137.12d | 0d |  |  |  |
| 9 | 2.1.1.2.2 | Adjudicación |  | 10d | 2023-02-13 | 2023-02-24 | 8 | 137.12d | 0d |  |  |  |
| 10 | 2.1.1.3 | **Ejecución de obra** |  | 230d | 2023-02-27 | 2024-01-12 |  | 137.12d |  |  |  | 1080h |
| 11 | 2.1.1.3.1 | Firma del contrato, Anticipo |  | 15d | 2023-02-27 | 2023-03-17 | 9 | 137.12d | 0d |  |  |  |
| 12 | 2.1.1.3.2 | Etapa 1 |  | 20d | 2023-03-20 | 2023-04-14 | 11 | 137.12d | 0d |  |  |  |
| 13 | 2.1.1.3.3 | Etapa 2 |  | 20d | 2023-04-17 | 2023-05-12 | 12 | 137.12d | 0d |  |  |  |
| 14 | 2.1.1.3.4 | Etapa 3 |  | 20d | 2023-05-15 | 2023-06-09 | 13 | 137.12d | 0d |  |  |  |
| 15 | 2.1.1.3.5 | Etapa 4 |  | 20d | 2023-06-12 | 2023-07-07 | 14 | 137.12d | 0d |  |  |  |
| 16 | 2.1.1.3.6 | Solicitud de revision de Obra Finalizada y Firma de Acta entrega recepción provisional | milestone | 15d | 2023-07-10 | 2023-07-28 | 15 | 137.12d | 0d |  | Acta Entrega-Recepción Provisional | 120h |
| 17 | 2.1.1.3.7 | Cumplimiento del correcto funcionamiento del proyecto y Firma de Acta entrega recepción definitiva |  | 120d | 2023-07-31 | 2024-01-12 | 16 | 137.12d |  |  | Acta Entrega-Recepción Definitiva | 960h |
| 18 | 2.1.1.4 | **Etapa preparatoria fiscalización** |  | 45d | 2022-11-28 | 2023-01-27 |  | 137.12d |  |  |  |  |
| 19 | 2.1.1.4.1 | Elaboración de los documentos habilitantes (informe necesidad, pliegos, presupuesto, TDR, certificación presupuestaria en torno al GAD) |  | 45d | 2022-11-28 | 2023-01-27 | 6SS | 137.12d | 0d | finish no earlier than 2023-01-27 |  |  |
| 20 | 2.1.1.5 | **Etapa precontractual fiscalización** |  | 20d | 2023-01-30 | 2023-02-24 |  | 137.12d |  |  |  |  |
| 21 | 2.1.1.5.1 | Proceso pre adjudicial |  | 10d | 2023-01-30 | 2023-02-10 | 19 | 137.12d | 0d |  |  |  |
| 22 | 2.1.1.5.2 | Adjudicación |  | 10d | 2023-02-13 | 2023-02-24 | 21 | 137.12d | 0d |  |  |  |
| 23 | 2.1.1.6 | **Ejecución de fiscalización** |  | 230d | 2023-02-27 | 2024-01-12 |  | 137.12d |  |  |  | 1080h |
| 24 | 2.1.1.6.1 | Firma del contrato, Anticipo |  | 15d | 2023-02-27 | 2023-03-17 | 22 | 137.12d | 0d |  |  |  |
| 25 | 2.1.1.6.2 | Etapa 1 |  | 20d | 2023-03-20 | 2023-04-14 | 24 | 137.12d | 0d |  |  |  |
| 26 | 2.1.1.6.3 | Etapa 2 |  | 20d | 2023-04-17 | 2023-05-12 | 25 | 137.12d | 0d |  |  |  |
| 27 | 2.1.1.6.4 | Etapa 3 |  | 20d | 2023-05-15 | 2023-06-09 | 26 | 137.12d | 0d |  |  |  |
| 28 | 2.1.1.6.5 | Etapa 4 |  | 20d | 2023-06-12 | 2023-07-07 | 27 | 137.12d | 0d |  |  |  |
| 29 | 2.1.1.6.6 | Solicitud de revision de Obra Finalizada y Firma de Acta entrega recepción provisional | milestone | 15d | 2023-07-10 | 2023-07-28 | 28 | 137.12d | 0d |  | Acta Entrega-Recepción Provisional | 120h |
| 30 | 2.1.1.6.7 | Cumplimiento del correcto funcionamiento del proyecto y Firma de Acta entrega recepción definitiva |  | 120d | 2023-07-31 | 2024-01-12 | 29 | 137.12d |  |  | Acta Entrega-Recepción Definitiva | 960h |

| ID | WBS | Task | Type | Duration | Start | Finish | Predecessors | Total slack | Free slack | Constraint | Resources | Work |
| --- | --- | --- | --- | --- | --- | --- | --- | --- | --- | --- | --- | --- |
| 32 | 3 | **ESTUDIO DEL SISTEMA DE ALCANTARILLADO Y SISTEMA DE TRATAMIENTO DE AGUAS RESIDUALES EN EL SECTOR DE EL CAJÓN, PARROQUIA DE SANTA ROSA DE CUZUBAMBA, CANTON CAYAMBE, PROVINCIA DE PICHINCHA** |  | 295d | 2022-11-28 | 2024-01-12 |  | 137.12d |  |  |  | 2160h |
| 33 | 3.1 | **Parte GAD** |  | 295d | 2022-11-28 | 2024-01-12 |  | 137.12d |  |  |  | 2160h |
| 34 | 3.1.1 | **Ejecución del convenio obra** |  | 295d | 2022-11-28 | 2024-01-12 |  | 137.12d |  |  |  | 2160h |
| 35 | 3.1.1.1 | **Etapa preparatoria obra** |  | 45d | 2022-11-28 | 2023-01-27 |  | 137.12d |  |  |  |  |
| 36 | 3.1.1.1.1 | Elaboración de los documentos habilitantes (informe necesidad, pliegos, presupuesto, TDR, certificación presupuestaria en torno al GAD) |  | 45d | 2022-11-28 | 2023-01-27 |  | 137.12d | 0d | finish no earlier than 2023-01-27 |  |  |
| 37 | 3.1.1.2 | **Etapa precontractual obra** |  | 20d | 2023-01-30 | 2023-02-24 |  | 137.12d |  |  |  |  |
| 38 | 3.1.1.2.1 | Proceso pre adjudicial (subida al portal hasta calificación) |  | 10d | 2023-01-30 | 2023-02-10 | 36 | 137.12d | 0d |  |  |  |
| 39 | 3.1.1.2.2 | Adjudicación |  | 10d | 2023-02-13 | 2023-02-24 | 38 | 137.12d | 0d |  |  |  |
| 40 | 3.1.1.3 | **Ejecución de obra** |  | 230d | 2023-02-27 | 2024-01-12 |  | 137.12d |  |  |  | 1080h |
| 41 | 3.1.1.3.1 | Firma del contrato, Anticipo |  | 15d | 2023-02-27 | 2023-03-17 | 39 | 137.12d | 0d |  |  |  |
| 42 | 3.1.1.3.2 | Etapa 1 |  | 20d | 2023-03-20 | 2023-04-14 | 41 | 137.12d | 0d |  |  |  |
| 43 | 3.1.1.3.3 | Etapa 2 |  | 20d | 2023-04-17 | 2023-05-12 | 42 | 137.12d | 0d |  |  |  |
| 44 | 3.1.1.3.4 | Etapa 3 |  | 20d | 2023-05-15 | 2023-06-09 | 43 | 137.12d | 0d |  |  |  |
| 45 | 3.1.1.3.5 | Etapa 4 |  | 20d | 2023-06-12 | 2023-07-07 | 44 | 137.12d | 0d |  |  |  |
| 46 | 3.1.1.3.6 | Solicitud de revision de Obra Finalizada y Firma de Acta entrega recepcion provisional | milestone | 15d | 2023-07-10 | 2023-07-28 | 45 | 137.12d | 0d |  | Acta Entrega-Recepción Provisional | 120h |
| 47 | 3.1.1.3.7 | Cumplimiento del correcto funcionamiento del proyecto y Firma de Acta entrega recepción definitiva |  | 120d | 2023-07-31 | 2024-01-12 | 46 | 137.12d |  |  | Acta Entrega-Recepción Definitiva | 960h |
| 48 | 3.1.1.4 | **Etapa preparatoria fiscalización** |  | 45d | 2022-11-28 | 2023-01-27 |  | 137.12d |  |  |  |  |
| 49 | 3.1.1.4.1 | Elaboración de los documentos habilitantes (informe necesidad, pliegos, presupuesto, TDR, certificación presupuestaria en torno al GAD) |  | 45d | 2022-11-28 | 2023-01-27 | 36SS | 137.12d | 0d | finish no earlier than 2023-01-27 |  |  |
| 50 | 3.1.1.5 | **Etapa precontractual fiscalización** |  | 20d | 2023-01-30 | 2023-02-24 |  | 137.12d |  |  |  |  |
| 51 | 3.1.1.5.1 | Proceso pre adjudicial |  | 10d | 2023-01-30 | 2023-02-10 | 49 | 137.12d | 0d |  |  |  |
| 52 | 3.1.1.5.2 | Adjudicación |  | 10d | 2023-02-13 | 2023-02-24 | 51 | 137.12d | 0d |  |  |  |
| 53 | 3.1.1.6 | **Ejecución de fiscalización** |  | 230d | 2023-02-27 | 2024-01-12 |  | 137.12d |  |  |  | 1080h |
| 54 | 3.1.1.6.1 | Firma del contrato, Anticipo |  | 15d | 2023-02-27 | 2023-03-17 | 52 | 137.12d | 0d |  |  |  |
| 55 | 3.1.1.6.2 | Etapa 1 |  | 20d | 2023-03-20 | 2023-04-14 | 54 | 137.12d | 0d |  |  |  |
| 56 | 3.1.1.6.3 | Etapa 2 |  | 20d | 2023-04-17 | 2023-05-12 | 55 | 137.12d | 0d |  |  |  |
| 57 | 3.1.1.6.4 | Etapa 3 |  | 20d | 2023-05-15 | 2023-06-09 | 56 | 137.12d | 0d |  |  |  |
| 58 | 3.1.1.6.5 | Etapa 4 |  | 20d | 2023-06-12 | 2023-07-07 | 57 | 137.12d | 0d |  |  |  |
| 59 | 3.1.1.6.6 | Solicitud de revision de Obra Finalizada y Firma de Acta entrega recepción provisional | milestone | 15d | 2023-07-10 | 2023-07-28 | 58 | 137.12d | 0d |  | Acta Entrega-Recepción Provisional | 120h |
| 60 | 3.1.1.6.7 | Cumplimiento del correcto funcionamiento del proyecto y Firma de Acta entrega recepción definitiva |  | 120d | 2023-07-31 | 2024-01-12 | 59 | 137.12d |  |  | Acta Entrega-Recepción Definitiva | 960h |

| ID | WBS | Task | Type | Duration | Start | Finish | Predecessors | Total slack | Free slack | Constraint | Resources | Work |
| --- | --- | --- | --- | --- | --- | --- | --- | --- | --- | --- | --- | --- |
| 62 | 4 | **ESTUDIOS Y DISEÑOS DEFINITIVOS DEL SISTEMA DE ALCANTARILLADO SANITARIO PARA EL BARRIO MULLUNAMÁ, PARROQUIA CELICA, CANTÓN CELICA, PROVINCIA DE LOJA** |  | 275d | 2022-11-28 | 2023-12-15 |  | 157.12d |  |  |  | 2160h |
| 63 | 4.1 | **Parte GAD** |  | 275d | 2022-11-28 | 2023-12-15 |  | 157.12d |  |  |  | 2160h |
| 64 | 4.1.1 | **Ejecución del convenio obra** |  | 275d | 2022-11-28 | 2023-12-15 |  | 157.12d |  |  |  | 2160h |
| 65 | 4.1.1.1 | **Etapa preparatoria obra** |  | 45d | 2022-11-28 | 2023-01-27 |  | 157.12d |  |  |  |  |
| 66 | 4.1.1.1.1 | Elaboración de los documentos habilitantes (informe necesidad, pliegos, presupuesto, TDR, certificación presupuestaria en torno al GAD) |  | 45d | 2022-11-28 | 2023-01-27 |  | 157.12d | 0d | finish no earlier than 2023-01-27 |  |  |
| 67 | 4.1.1.2 | **Etapa precontractual obra** |  | 20d | 2023-01-30 | 2023-02-24 |  | 157.12d |  |  |  |  |
| 68 | 4.1.1.2.1 | Proceso pre adjudicial (subida al portal hasta calificación) |  | 10d | 2023-01-30 | 2023-02-10 | 66 | 157.12d | 0d |  |  |  |
| 69 | 4.1.1.2.2 | Adjudicación |  | 10d | 2023-02-13 | 2023-02-24 | 68 | 157.12d | 0d |  |  |  |
| 70 | 4.1.1.3 | **Ejecución de obra** |  | 210d | 2023-02-27 | 2023-12-15 |  | 157.12d |  |  |  | 1080h |
| 71 | 4.1.1.3.1 | Firma del contrato, Anticipo |  | 15d | 2023-02-27 | 2023-03-17 | 69 | 157.12d | 0d |  |  |  |
| 72 | 4.1.1.3.2 | Etapa 1 |  | 20d | 2023-03-20 | 2023-04-14 | 71 | 157.12d | 0d |  |  |  |
| 73 | 4.1.1.3.3 | Etapa 2 |  | 20d | 2023-04-17 | 2023-05-12 | 72 | 157.12d | 0d |  |  |  |
| 74 | 4.1.1.3.4 | Etapa 3 |  | 20d | 2023-05-15 | 2023-06-09 | 73 | 157.12d | 0d |  |  |  |
| 75 | 4.1.1.3.5 | Solicitud de revision de Obra Finalizada y Firma de Acta entrega recepción provisional | milestone | 15d | 2023-06-12 | 2023-06-30 | 74 | 157.12d | 0d |  | Acta Entrega-Recepción Provisional | 120h |
| 76 | 4.1.1.3.6 | Cumplimiento del correcto funcionamiento del proyecto y Firma de Acta entrega recepción definitiva |  | 120d | 2023-07-03 | 2023-12-15 | 75 | 157.12d |  |  | Acta Entrega-Recepción Definitiva | 960h |
| 77 | 4.1.1.4 | **Etapa preparatoria fiscalización** |  | 45d | 2022-11-28 | 2023-01-27 |  | 157.12d |  |  |  |  |
| 78 | 4.1.1.4.1 | Elaboración de los documentos habilitantes (informe necesidad, pliegos, presupuesto, TDR, certificación presupuestaria en torno al GAD) |  | 45d | 2022-11-28 | 2023-01-27 | 66SS | 157.12d | 0d | finish no earlier than 2023-01-27 |  |  |
| 79 | 4.1.1.5 | **Etapa precontractual fiscalización** |  | 20d | 2023-01-30 | 2023-02-24 |  | 157.12d |  |  |  |  |
| 80 | 4.1.1.5.1 | Proceso pre adjudicial |  | 10d | 2023-01-30 | 2023-02-10 | 78 | 157.12d | 0d |  |  |  |
| 81 | 4.1.1.5.2 | Adjudicación |  | 10d | 2023-02-13 | 2023-02-24 | 80 | 157.12d | 0d |  |  |  |
| 82 | 4.1.1.6 | **Ejecución de fiscalización** |  | 210d | 2023-02-27 | 2023-12-15 |  | 157.12d |  |  |  | 1080h |
| 83 | 4.1.1.6.1 | Firma del contrato, Anticipo |  | 15d | 2023-02-27 | 2023-03-17 | 81 | 157.12d | 0d |  |  |  |
| 84 | 4.1.1.6.2 | Etapa 1 |  | 20d | 2023-03-20 | 2023-04-14 | 83 | 157.12d | 0d |  |  |  |
| 85 | 4.1.1.6.3 | Etapa 2 |  | 20d | 2023-04-17 | 2023-05-12 | 84 | 157.12d | 0d |  |  |  |
| 86 | 4.1.1.6.4 | Etapa 3 |  | 20d | 2023-05-15 | 2023-06-09 | 85 | 157.12d | 0d |  |  |  |
| 87 | 4.1.1.6.5 | Solicitud de revision de Obra Finalizada y Firma de Acta entrega recepción provisional | milestone | 15d | 2023-06-12 | 2023-06-30 | 86 | 157.12d | 0d |  | Acta Entrega-Recepción Provisional | 120h |
| 88 | 4.1.1.6.6 | Cumplimiento del correcto funcionamiento del proyecto y Firma de Acta entrega recepción definitiva |  | 120d | 2023-07-03 | 2023-12-15 | 87 | 157.12d |  |  | Acta Entrega-Recepción Definitiva | 960h |

| ID | WBS | Task | Type | Duration | Start | Finish | Predecessors | Total slack | Free slack | Constraint | Resources | Work |
| --- | --- | --- | --- | --- | --- | --- | --- | --- | --- | --- | --- | --- |
| 90 | 5 | **DISEÑO DEL SISTEMA DE ALCANTARILLADO SANITARIO PARA EL BARRIO SANTA FE, COMUNIDAD PULINGUÍ, PARROQUIA SAN ANDRÉS, CANTÓN GUANO, PROVINCIA DE CHIMBORAZO** |  | 275d | 2022-11-28 | 2023-12-15 |  | 157.12d |  |  |  | 2160h |
| 91 | 5.1 | **Parte GAD** |  | 275d | 2022-11-28 | 2023-12-15 |  | 157.12d |  |  |  | 2160h |
| 92 | 5.1.1 | **Ejecución del convenio obra** |  | 275d | 2022-11-28 | 2023-12-15 |  | 157.12d |  |  |  | 2160h |
| 93 | 5.1.1.1 | **Etapa preparatoria obra** |  | 45d | 2022-11-28 | 2023-01-27 |  | 157.12d |  |  |  |  |
| 94 | 5.1.1.1.1 | Elaboración de los documentos habilitantes (informe necesidad, pliegos, presupuesto, TDR, certificación presupuestaria en torno al GAD) |  | 45d | 2022-11-28 | 2023-01-27 |  | 157.12d | 0d | finish no earlier than 2023-01-27 |  |  |
| 95 | 5.1.1.2 | **Etapa precontractual obra** |  | 20d | 2023-01-30 | 2023-02-24 |  | 157.12d |  |  |  |  |
| 96 | 5.1.1.2.1 | Proceso pre adjudicial (subida al portal hasta calificación) |  | 10d | 2023-01-30 | 2023-02-10 | 94 | 157.12d | 0d |  |  |  |
| 97 | 5.1.1.2.2 | Adjudicación |  | 10d | 2023-02-13 | 2023-02-24 | 96 | 157.12d | 0d |  |  |  |
| 98 | 5.1.1.3 | **Ejecución de obra** |  | 210d | 2023-02-27 | 2023-12-15 |  | 157.12d |  |  |  | 1080h |
| 99 | 5.1.1.3.1 | Firma del contrato, Anticipo |  | 15d | 2023-02-27 | 2023-03-17 | 97 | 157.12d | 0d |  |  |  |
| 100 | 5.1.1.3.2 | Etapa 1 |  | 20d | 2023-03-20 | 2023-04-14 | 99 | 157.12d | 0d |  |  |  |
| 101 | 5.1.1.3.3 | Etapa 2 |  | 20d | 2023-04-17 | 2023-05-12 | 100 | 157.12d | 0d |  |  |  |
| 102 | 5.1.1.3.4 | Etapa 3 |  | 20d | 2023-05-15 | 2023-06-09 | 101 | 157.12d | 0d |  |  |  |
| 103 | 5.1.1.3.5 | Solicitud de revision de Obra Finalizada y Firma de Acta entrega recepción provisional | milestone | 15d | 2023-06-12 | 2023-06-30 | 102 | 157.12d | 0d |  | Acta Entrega-Recepción Provisional | 120h |
| 104 | 5.1.1.3.6 | Cumplimiento del correcto funcionamiento del proyecto y Firma de Acta entrega recepción definitiva |  | 120d | 2023-07-03 | 2023-12-15 | 103 | 157.12d |  |  | Acta Entrega-Recepción Definitiva | 960h |
| 105 | 5.1.1.4 | **Etapa preparatoria fiscalización** |  | 45d | 2022-11-28 | 2023-01-27 |  | 157.12d |  |  |  |  |
| 106 | 5.1.1.4.1 | Elaboración de los documentos habilitantes (informe necesidad, pliegos, presupuesto, TDR, certificación presupuestaria en torno al GAD) |  | 45d | 2022-11-28 | 2023-01-27 | 94SS | 157.12d | 0d | finish no earlier than 2023-01-27 |  |  |
| 107 | 5.1.1.5 | **Etapa precontractual fiscalización** |  | 20d | 2023-01-30 | 2023-02-24 |  | 157.12d |  |  |  |  |
| 108 | 5.1.1.5.1 | Proceso pre adjudicial |  | 10d | 2023-01-30 | 2023-02-10 | 106 | 157.12d | 0d |  |  |  |
| 109 | 5.1.1.5.2 | Adjudicación |  | 10d | 2023-02-13 | 2023-02-24 | 108 | 157.12d | 0d |  |  |  |
| 110 | 5.1.1.6 | **Ejecución de fiscalización** |  | 210d | 2023-02-27 | 2023-12-15 |  | 157.12d |  |  |  | 1080h |
| 111 | 5.1.1.6.1 | Firma del contrato, Anticipo |  | 15d | 2023-02-27 | 2023-03-17 | 109 | 157.12d | 0d |  |  |  |
| 112 | 5.1.1.6.2 | Etapa 1 |  | 20d | 2023-03-20 | 2023-04-14 | 111 | 157.12d | 0d |  |  |  |
| 113 | 5.1.1.6.3 | Etapa 2 |  | 20d | 2023-04-17 | 2023-05-12 | 112 | 157.12d | 0d |  |  |  |
| 114 | 5.1.1.6.4 | Etapa 3 |  | 20d | 2023-05-15 | 2023-06-09 | 113 | 157.12d | 0d |  |  |  |
| 115 | 5.1.1.6.5 | Solicitud de revision de Obra Finalizada y Firma de Acta entrega recepción provisional | milestone | 15d | 2023-06-12 | 2023-06-30 | 114 | 157.12d | 0d |  | Acta Entrega-Recepción Provisional | 120h |
| 116 | 5.1.1.6.6 | Cumplimiento del correcto funcionamiento del proyecto y Firma de Acta entrega recepción definitiva |  | 120d | 2023-07-03 | 2023-12-15 | 115 | 157.12d |  |  | Acta Entrega-Recepción Definitiva | 960h |

| ID | WBS | Task | Type | Duration | Start | Finish | Predecessors | Total slack | Free slack | Constraint | Resources | Work |
| --- | --- | --- | --- | --- | --- | --- | --- | --- | --- | --- | --- | --- |
| 118 | 6 | **ESTUDIOS Y DISEÑOS DEFINITIVOS PARA LA CONSTRUCCIÓN DEL SISTEMA DE SANEAMIENTO DE LAS COMUNIDADES: LUBUZHCO, PURITACA, TRAPICHILLO Y PUNCHANDA, PARROQUIA NUEVA FÁTIMA, CANTÓN SOZORANGA, PROVINCIA DE LOJA** |  | 335d | 2022-11-28 | 2024-03-08 |  | 97.12d |  |  |  | 2160h |
| 119 | 6.1 | **Parte GAD** |  | 335d | 2022-11-28 | 2024-03-08 |  | 97.12d |  |  |  | 2160h |
| 120 | 6.1.1 | **Ejecución del convenio obra** |  | 335d | 2022-11-28 | 2024-03-08 |  | 97.12d |  |  |  | 2160h |
| 121 | 6.1.1.1 | **Etapa preparatoria obra** |  | 45d | 2022-11-28 | 2023-01-27 |  | 97.12d |  |  |  |  |
| 122 | 6.1.1.1.1 | Elaboración de los documentos habilitantes (informe necesidad, pliegos, presupuesto, TDR, certificación presupuestaria en torno al GAD) |  | 45d | 2022-11-28 | 2023-01-27 |  | 97.12d | 0d | finish no earlier than 2023-01-27 |  |  |
| 123 | 6.1.1.2 | **Etapa precontractual obra** |  | 20d | 2023-01-30 | 2023-02-24 |  | 97.12d |  |  |  |  |
| 124 | 6.1.1.2.1 | Proceso pre adjudicial (subida al portal hasta calificación) |  | 10d | 2023-01-30 | 2023-02-10 | 122 | 97.12d | 0d |  |  |  |
| 125 | 6.1.1.2.2 | Adjudicación |  | 10d | 2023-02-13 | 2023-02-24 | 124 | 97.12d | 0d |  |  |  |
| 126 | 6.1.1.3 | **Ejecución de obra** |  | 270d | 2023-02-27 | 2024-03-08 |  | 97.12d |  |  |  | 1080h |
| 127 | 6.1.1.3.1 | Firma del contrato, Anticipo |  | 15d | 2023-02-27 | 2023-03-17 | 125 | 97.12d | 0d |  |  |  |
| 128 | 6.1.1.3.2 | Etapa 1 |  | 20d | 2023-03-20 | 2023-04-14 | 127 | 97.12d | 0d |  |  |  |
| 129 | 6.1.1.3.3 | Etapa 2 |  | 20d | 2023-04-17 | 2023-05-12 | 128 | 97.12d | 0d |  |  |  |
| 130 | 6.1.1.3.4 | Etapa 3 |  | 20d | 2023-05-15 | 2023-06-09 | 129 | 97.12d | 0d |  |  |  |
| 131 | 6.1.1.3.5 | Etapa 4 |  | 20d | 2023-06-12 | 2023-07-07 | 130 | 97.12d | 0d |  |  |  |
| 132 | 6.1.1.3.6 | Etapa 5 |  | 20d | 2023-07-10 | 2023-08-04 | 131 | 97.12d | 0d |  |  |  |
| 133 | 6.1.1.3.7 | Etapa 6 |  | 20d | 2023-08-07 | 2023-09-01 | 132 | 97.12d | 0d |  |  |  |
| 134 | 6.1.1.3.8 | Solicitud de revision de Obra Finalizada y Firma de Acta entrega recepción provisional | milestone | 15d | 2023-09-04 | 2023-09-22 | 133 | 97.12d | 0d |  | Acta Entrega-Recepción Provisional | 120h |
| 135 | 6.1.1.3.9 | Cumplimiento del correcto funcionamiento del proyecto y Firma de Acta entrega recepción definitiva |  | 120d | 2023-09-25 | 2024-03-08 | 134 | 97.12d |  |  | Acta Entrega-Recepción Definitiva | 960h |
| 136 | 6.1.1.4 | **Etapa preparatoria fiscalización** |  | 45d | 2022-11-28 | 2023-01-27 |  | 97.12d |  |  |  |  |
| 137 | 6.1.1.4.1 | Elaboración de los documentos habilitantes (informe necesidad, pliegos, presupuesto, TDR, certificación presupuestaria en torno al GAD) |  | 45d | 2022-11-28 | 2023-01-27 | 122SS | 97.12d | 0d |  |  |  |
| 138 | 6.1.1.5 | **Etapa precontractual fiscalización** |  | 20d | 2023-01-30 | 2023-02-24 |  | 97.12d |  |  |  |  |
| 139 | 6.1.1.5.1 | Proceso pre adjudicial |  | 10d | 2023-01-30 | 2023-02-10 | 137 | 97.12d | 0d |  |  |  |
| 140 | 6.1.1.5.2 | Adjudicación |  | 10d | 2023-02-13 | 2023-02-24 | 139 | 97.12d | 0d |  |  |  |
| 141 | 6.1.1.6 | **Ejecución de fiscalización** |  | 270d | 2023-02-27 | 2024-03-08 |  | 97.12d |  |  |  | 1080h |
| 142 | 6.1.1.6.1 | Firma del contrato, Anticipo |  | 15d | 2023-02-27 | 2023-03-17 | 140 | 97.12d | 0d |  |  |  |
| 143 | 6.1.1.6.2 | Etapa 1 |  | 20d | 2023-03-20 | 2023-04-14 | 142 | 97.12d | 0d |  |  |  |
| 144 | 6.1.1.6.3 | Etapa 2 |  | 20d | 2023-04-17 | 2023-05-12 | 143 | 97.12d | 0d |  |  |  |
| 145 | 6.1.1.6.4 | Etapa 3 |  | 20d | 2023-05-15 | 2023-06-09 | 144 | 97.12d | 0d |  |  |  |
| 146 | 6.1.1.6.5 | Etapa 4 |  | 20d | 2023-06-12 | 2023-07-07 | 145 | 97.12d | 0d |  |  |  |
| 147 | 6.1.1.6.6 | Etapa 5 |  | 20d | 2023-07-10 | 2023-08-04 | 146 | 97.12d | 0d |  |  |  |
| 148 | 6.1.1.6.7 | Etapa6 |  | 20d | 2023-08-07 | 2023-09-01 | 147 | 97.12d | 0d |  |  |  |
| 149 | 6.1.1.6.8 | Solicitud de revision de Obra Finalizada y Firma de Acta entrega recepción provisional | milestone | 15d | 2023-09-04 | 2023-09-22 | 148 | 97.12d | 0d |  | Acta Entrega-Recepción Provisional | 120h |
| 150 | 6.1.1.6.9 | Cumplimiento del correcto funcionamiento del proyecto y Firma de Acta entrega recepción definitiva |  | 120d | 2023-09-25 | 2024-03-08 | 149 | 97.12d |  |  | Acta Entrega-Recepción Definitiva | 960h |

| ID | WBS | Task | Type | Duration | Start | Finish | Predecessors | Total slack | Free slack | Constraint | Resources | Work |
| --- | --- | --- | --- | --- | --- | --- | --- | --- | --- | --- | --- | --- |
| 152 | 7 | **ESTUDIOS DE LA EVALUACIÓN, DIAGNÓSTICO Y DISEÑOS DEFINITIVOS DEL SISTEMA DE AGUA POTABLE CALERA GRANDE POMALÓ, PARROQUIA SAN JUAN, CANTÓN RIOBAMBA, PROVINCIA DE CHIMBORAZO** |  | 294d | 2022-12-02 | 2024-01-18 |  | 134d |  |  |  | 2160h |
| 153 | 7.1 | **Parte GAD** |  | 294d | 2022-12-02 | 2024-01-18 |  | 134d |  |  |  | 2160h |
| 154 | 7.1.1 | **Ejecución del convenio obra** |  | 294d | 2022-12-02 | 2024-01-18 |  | 134d |  |  |  | 2160h |
| 155 | 7.1.1.1 | **Etapa preparatoria obra** |  | 44d | 2022-12-02 | 2023-02-02 |  | 134d |  |  |  |  |
| 156 | 7.1.1.1.1 | Elaboración de los documentos habilitantes (informe necesidad, pliegos, presupuesto, TDR, certificación presupuestaria en torno al GAD) |  | 44d | 2022-12-02 | 2023-02-02 |  | 134d | 0d | start no earlier than 2022-12-02 |  |  |
| 157 | 7.1.1.2 | **Etapa precontractual obra** |  | 20d | 2023-02-02 | 2023-03-02 |  | 134d |  |  |  |  |
| 158 | 7.1.1.2.1 | Proceso pre adjudicial (subida al portal hasta calificación) |  | 10d | 2023-02-02 | 2023-02-16 | 156 | 134d | 0d |  |  |  |
| 159 | 7.1.1.2.2 | Adjudicación |  | 10d | 2023-02-16 | 2023-03-02 | 158 | 134d | 0d |  |  |  |
| 160 | 7.1.1.3 | **Ejecución de obra** |  | 230d | 2023-03-02 | 2024-01-18 |  | 134d |  |  |  | 1080h |
| 161 | 7.1.1.3.1 | Firma del contrato, Anticipo |  | 15d | 2023-03-02 | 2023-03-23 | 159 | 134d | 0d |  |  |  |
| 162 | 7.1.1.3.2 | Etapa 1 |  | 20d | 2023-03-23 | 2023-04-20 | 161 | 134d | 0d |  |  |  |
| 163 | 7.1.1.3.3 | Etapa 2 |  | 20d | 2023-04-20 | 2023-05-18 | 162 | 134d | 0d |  |  |  |
| 164 | 7.1.1.3.4 | Etapa 3 |  | 20d | 2023-05-18 | 2023-06-15 | 163 | 134d | 0d |  |  |  |
| 165 | 7.1.1.3.5 | Etapa 4 |  | 20d | 2023-06-15 | 2023-07-13 | 164 | 134d | 0d |  |  |  |
| 166 | 7.1.1.3.6 | Solicitud de revision de Obra Finalizada y Firma de Acta entrega recepción provisional | milestone | 15d | 2023-07-13 | 2023-08-03 | 165 | 134d | 0d |  | Acta Entrega-Recepción Provisional | 120h |
| 167 | 7.1.1.3.7 | Cumplimiento del correcto funcionamiento del proyecto y Firma de Acta entrega recepción definitiva |  | 120d | 2023-08-03 | 2024-01-18 | 166 | 134d |  |  | Acta Entrega-Recepción Definitiva | 960h |
| 168 | 7.1.1.4 | **Etapa preparatoria fiscalización** |  | 44d | 2022-12-02 | 2023-02-02 |  | 134d |  |  |  |  |
| 169 | 7.1.1.4.1 | Elaboración de los documentos habilitantes (informe necesidad, pliegos, presupuesto, TDR, certificación presupuestaria en torno al GAD) |  | 44d | 2022-12-02 | 2023-02-02 | 156SS | 134d | 0d | finish no earlier than 2023-01-02 |  |  |
| 170 | 7.1.1.5 | **Etapa precontractual fiscalización** |  | 20d | 2023-02-02 | 2023-03-02 |  | 134d |  |  |  |  |
| 171 | 7.1.1.5.1 | Proceso pre adjudicial |  | 10d | 2023-02-02 | 2023-02-16 | 169 | 134d | 0d |  |  |  |
| 172 | 7.1.1.5.2 | Adjudicación |  | 10d | 2023-02-16 | 2023-03-02 | 171 | 134d | 0d |  |  |  |
| 173 | 7.1.1.6 | **Ejecución de fiscalización** |  | 230d | 2023-03-02 | 2024-01-18 |  | 134d |  |  |  | 1080h |
| 174 | 7.1.1.6.1 | Firma del contrato, Anticipo |  | 15d | 2023-03-02 | 2023-03-23 | 172 | 134d | 0d |  |  |  |
| 175 | 7.1.1.6.2 | Etapa 1 |  | 20d | 2023-03-23 | 2023-04-20 | 174 | 134d | 0d |  |  |  |
| 176 | 7.1.1.6.3 | Etapa 2 |  | 20d | 2023-04-20 | 2023-05-18 | 175 | 134d | 0d |  |  |  |
| 177 | 7.1.1.6.4 | Etapa 3 |  | 20d | 2023-05-18 | 2023-06-15 | 176 | 134d | 0d |  |  |  |
| 178 | 7.1.1.6.5 | Etapa 4 |  | 20d | 2023-06-15 | 2023-07-13 | 177 | 134d | 0d |  |  |  |
| 179 | 7.1.1.6.6 | Solicitud de revision de Obra Finalizada y Firma de Acta entrega recepcion provisional | milestone | 15d | 2023-07-13 | 2023-08-03 | 178 | 134d | 0d |  | Acta Entrega-Recepción Provisional | 120h |
| 180 | 7.1.1.6.7 | Cumplimiento del correcto funcionamiento del proyecto y Firma de Acta entrega recepción definitiva |  | 120d | 2023-08-03 | 2024-01-18 | 179 | 134d |  |  | Acta Entrega-Recepción Definitiva | 960h |

| ID | WBS | Task | Type | Duration | Start | Finish | Predecessors | Total slack | Free slack | Constraint | Resources | Work |
| --- | --- | --- | --- | --- | --- | --- | --- | --- | --- | --- | --- | --- |
| 182 | 8 | **EVALUACIÓN, DIAGNÓSTICO Y DISEÑOS DEFINITIVOS DEL SISTEMA DE AGUA POTABLE DE LA COMUNIDAD SHOBOL LLIN LLIN, PARROQUIA SAN JUAN, CANTÓN RIOBAMBA, PROVINCIA DE CHIMBORAZO** |  | 294d | 2022-12-02 | 2024-01-18 |  | 134d |  |  |  | 2160h |
| 183 | 8.1 | **Parte GAD** |  | 294d | 2022-12-02 | 2024-01-18 |  | 134d |  |  |  | 2160h |
| 184 | 8.1.1 | **Ejecución del convenio obra** |  | 294d | 2022-12-02 | 2024-01-18 |  | 134d |  |  |  | 2160h |
| 185 | 8.1.1.1 | **Etapa preparatoria obra** |  | 44d | 2022-12-02 | 2023-02-02 |  | 134d |  |  |  |  |
| 186 | 8.1.1.1.1 | Elaboración de los documentos habilitantes (informe necesidad, pliegos, presupuesto, TDR, certificación presupuestaria en torno al GAD) |  | 44d | 2022-12-02 | 2023-02-02 |  | 134d | 0d | start no earlier than 2022-12-02 |  |  |
| 187 | 8.1.1.2 | **Etapa precontractual obra** |  | 20d | 2023-02-02 | 2023-03-02 |  | 134d |  |  |  |  |
| 188 | 8.1.1.2.1 | Proceso pre adjudicial (subida al portal hasta calificación) |  | 10d | 2023-02-02 | 2023-02-16 | 186 | 134d | 0d |  |  |  |
| 189 | 8.1.1.2.2 | Adjudicación |  | 10d | 2023-02-16 | 2023-03-02 | 188 | 134d | 0d |  |  |  |
| 190 | 8.1.1.3 | **Ejecución de obra** |  | 230d | 2023-03-02 | 2024-01-18 |  | 134d |  |  |  | 1080h |
| 191 | 8.1.1.3.1 | Firma del contrato, Anticipo |  | 15d | 2023-03-02 | 2023-03-23 | 189 | 134d | 0d |  |  |  |
| 192 | 8.1.1.3.2 | Etapa 1 |  | 20d | 2023-03-23 | 2023-04-20 | 191 | 134d | 0d |  |  |  |
| 193 | 8.1.1.3.3 | Etapa 2 |  | 20d | 2023-04-20 | 2023-05-18 | 192 | 134d | 0d |  |  |  |
| 194 | 8.1.1.3.4 | Etapa 3 |  | 20d | 2023-05-18 | 2023-06-15 | 193 | 134d | 0d |  |  |  |
| 195 | 8.1.1.3.5 | Etapa 4 |  | 20d | 2023-06-15 | 2023-07-13 | 194 | 134d | 0d |  |  |  |
| 196 | 8.1.1.3.6 | Solicitud de revision de Obra Finalizada y Firma de Acta entrega recepción provisional | milestone | 15d | 2023-07-13 | 2023-08-03 | 195 | 134d | 0d |  | Acta Entrega-Recepción Provisional | 120h |
| 197 | 8.1.1.3.7 | Cumplimiento del correcto funcionamiento del proyecto y Firma de Acta entrega recepción definitiva |  | 120d | 2023-08-03 | 2024-01-18 | 196 | 134d |  |  | Acta Entrega-Recepción Definitiva | 960h |
| 198 | 8.1.1.4 | **Etapa preparatoria fiscalización** |  | 44d | 2022-12-02 | 2023-02-02 |  | 134d |  |  |  |  |
| 199 | 8.1.1.4.1 | Elaboración de los documentos habilitantes (informe necesidad, pliegos, presupuesto, TDR, certificación presupuestaria en torno al GAD) |  | 44d | 2022-12-02 | 2023-02-02 | 186SS | 134d | 0d | finish no earlier than 2023-01-02 |  |  |
| 200 | 8.1.1.5 | **Etapa precontractual fiscalización** |  | 20d | 2023-02-02 | 2023-03-02 |  | 134d |  |  |  |  |
| 201 | 8.1.1.5.1 | Proceso pre adjudicial |  | 10d | 2023-02-02 | 2023-02-16 | 199 | 134d | 0d |  |  |  |
| 202 | 8.1.1.5.2 | Adjudicación |  | 10d | 2023-02-16 | 2023-03-02 | 201 | 134d | 0d |  |  |  |
| 203 | 8.1.1.6 | **Ejecución de fiscalización** |  | 230d | 2023-03-02 | 2024-01-18 |  | 134d |  |  |  | 1080h |
| 204 | 8.1.1.6.1 | Firma del contrato, Anticipo |  | 15d | 2023-03-02 | 2023-03-23 | 202 | 134d | 0d |  |  |  |
| 205 | 8.1.1.6.2 | Etapa 1 |  | 20d | 2023-03-23 | 2023-04-20 | 204 | 134d | 0d |  |  |  |
| 206 | 8.1.1.6.3 | Etapa 2 |  | 20d | 2023-04-20 | 2023-05-18 | 205 | 134d | 0d |  |  |  |
| 207 | 8.1.1.6.4 | Etapa 3 |  | 20d | 2023-05-18 | 2023-06-15 | 206 | 134d | 0d |  |  |  |
| 208 | 8.1.1.6.5 | Etapa 4 |  | 20d | 2023-06-15 | 2023-07-13 | 207 | 134d | 0d |  |  |  |
| 209 | 8.1.1.6.6 | Solicitud de revision de Obra Finalizada y Firma de Acta entrega recepcion provisional | milestone | 15d | 2023-07-13 | 2023-08-03 | 208 | 134d | 0d |  | Acta Entrega-Recepción Provisional | 120h |
| 210 | 8.1.1.6.7 | Cumplimiento del correcto funcionamiento del proyecto y Firma de Acta entrega recepción definitiva |  | 120d | 2023-08-03 | 2024-01-18 | 209 | 134d |  |  | Acta Entrega-Recepción Definitiva | 960h |

| ID | WBS | Task | Type | Duration | Start | Finish | Predecessors | Total slack | Free slack | Constraint | Resources | Work |
| --- | --- | --- | --- | --- | --- | --- | --- | --- | --- | --- | --- | --- |
| 212 | 9 | **ESTUDIOS Y DISEÑOS DEFINITIVOS DEL SISTEMA DE AGUA POTABLE DE LOS BARRIOS NUMBIARANGA, PUCHANDA Y LAS DELICIAS, DE LA PARROQUIA LARAMA, CANTÓN MACARÁ, PROVINCIA DE LOJA** |  | 334d | 2022-12-02 | 2024-03-14 |  | 94d |  |  |  | 2160h |
| 213 | 9.1 | **Parte GAD** |  | 334d | 2022-12-02 | 2024-03-14 |  | 94d |  |  |  | 2160h |
| 214 | 9.1.1 | **Ejecución del convenio obra** |  | 334d | 2022-12-02 | 2024-03-14 |  | 94d |  |  |  | 2160h |
| 215 | 9.1.1.1 | **Etapa preparatoria obra** |  | 44d | 2022-12-02 | 2023-02-02 |  | 94d |  |  |  |  |
| 216 | 9.1.1.1.1 | Elaboración de los documentos habilitantes (informe necesidad, pliegos, presupuesto, TDR, certificación presupuestaria en torno al GAD) |  | 44d | 2022-12-02 | 2023-02-02 |  | 94d | 0d | start no earlier than 2022-12-02 |  |  |
| 217 | 9.1.1.2 | **Etapa precontractual obra** |  | 20d | 2023-02-02 | 2023-03-02 |  | 94d |  |  |  |  |
| 218 | 9.1.1.2.1 | Proceso pre adjudicial (subida al portal hasta calificación) |  | 10d | 2023-02-02 | 2023-02-16 | 216 | 94d | 0d |  |  |  |
| 219 | 9.1.1.2.2 | Adjudicación |  | 10d | 2023-02-16 | 2023-03-02 | 218 | 94d | 0d |  |  |  |
| 220 | 9.1.1.3 | **Ejecución de obra** |  | 270d | 2023-03-02 | 2024-03-14 |  | 94d |  |  |  | 1080h |
| 221 | 9.1.1.3.1 | Firma del contrato, Anticipo |  | 15d | 2023-03-02 | 2023-03-23 | 219 | 94d | 0d |  |  |  |
| 222 | 9.1.1.3.2 | Etapa 1 |  | 20d | 2023-03-23 | 2023-04-20 | 221 | 94d | 0d |  |  |  |
| 223 | 9.1.1.3.3 | Etapa 2 |  | 20d | 2023-04-20 | 2023-05-18 | 222 | 94d | 0d |  |  |  |
| 224 | 9.1.1.3.4 | Etapa 3 |  | 20d | 2023-05-18 | 2023-06-15 | 223 | 94d | 0d |  |  |  |
| 225 | 9.1.1.3.5 | Etapa 4 |  | 20d | 2023-06-15 | 2023-07-13 | 224 | 94d | 0d |  |  |  |
| 226 | 9.1.1.3.6 | Etapa 5 |  | 20d | 2023-07-13 | 2023-08-10 | 225 | 94d | 0d |  |  |  |
| 227 | 9.1.1.3.7 | Etapa 6 |  | 20d | 2023-08-10 | 2023-09-07 | 226 | 94d | 0d |  |  |  |
| 228 | 9.1.1.3.8 | Solicitud de revision de Obra Finalizada y Firma de Acta entrega recepción provisional | milestone | 15d | 2023-09-07 | 2023-09-28 | 227 | 94d | 0d |  | Acta Entrega-Recepción Provisional | 120h |
| 229 | 9.1.1.3.9 | Cumplimiento del correcto funcionamiento del proyecto y Firma de Acta entrega recepción definitiva |  | 120d | 2023-09-28 | 2024-03-14 | 228 | 94d |  |  | Acta Entrega-Recepción Definitiva | 960h |
| 230 | 9.1.1.4 | **Etapa preparatoria fiscalización** |  | 44d | 2022-12-02 | 2023-02-02 |  | 94d |  |  |  |  |
| 231 | 9.1.1.4.1 | Elaboración de los documentos habilitantes (informe necesidad, pliegos, presupuesto, TDR, certificación presupuestaria en torno al GAD) |  | 44d | 2022-12-02 | 2023-02-02 | 216SS | 94d | 0d | finish no earlier than 2023-01-02 |  |  |
| 232 | 9.1.1.5 | **Etapa precontractual fiscalización** |  | 20d | 2023-02-02 | 2023-03-02 |  | 94d |  |  |  |  |
| 233 | 9.1.1.5.1 | Proceso pre adjudicial |  | 10d | 2023-02-02 | 2023-02-16 | 231 | 94d | 0d |  |  |  |
| 234 | 9.1.1.5.2 | Adjudicación |  | 10d | 2023-02-16 | 2023-03-02 | 233 | 94d | 0d |  |  |  |
| 235 | 9.1.1.6 | **Ejecución de fiscalización** |  | 270d | 2023-03-02 | 2024-03-14 |  | 94d |  |  |  | 1080h |
| 236 | 9.1.1.6.1 | Firma del contrato, Anticipo |  | 15d | 2023-03-02 | 2023-03-23 | 234 | 94d | 0d |  |  |  |
| 237 | 9.1.1.6.2 | Etapa 1 |  | 20d | 2023-03-23 | 2023-04-20 | 236 | 94d | 0d |  |  |  |
| 238 | 9.1.1.6.3 | Etapa 2 |  | 20d | 2023-04-20 | 2023-05-18 | 237 | 94d | 0d |  |  |  |
| 239 | 9.1.1.6.4 | Etapa 3 |  | 20d | 2023-05-18 | 2023-06-15 | 238 | 94d | 0d |  |  |  |
| 240 | 9.1.1.6.5 | Etapa 4 |  | 20d | 2023-06-15 | 2023-07-13 | 239 | 94d | 0d |  |  |  |
| 241 | 9.1.1.6.6 | Etapa 5 |  | 20d | 2023-07-13 | 2023-08-10 | 240 | 94d | 0d |  |  |  |
| 242 | 9.1.1.6.7 | Etapa 6 |  | 20d | 2023-08-10 | 2023-09-07 | 241 | 94d | 0d |  |  |  |
| 243 | 9.1.1.6.8 | Solicitud de revision de Obra Finalizada y Firma de Acta entrega recepción provisional | milestone | 15d | 2023-09-07 | 2023-09-28 | 242 | 94d | 0d |  | Acta Entrega-Recepción Provisional | 120h |
| 244 | 9.1.1.6.9 | Cumplimiento del correcto funcionamiento del proyecto y Firma de Acta entrega recepción definitiva |  | 120d | 2023-09-28 | 2024-03-14 | 243 | 94d |  |  | Acta Entrega-Recepción Definitiva | 960h |

| ID | WBS | Task | Type | Duration | Start | Finish | Predecessors | Total slack | Free slack | Constraint | Resources | Work |
| --- | --- | --- | --- | --- | --- | --- | --- | --- | --- | --- | --- | --- |
| 246 | 10 | **ESTUDIO DEFINITIVO DEL SISTEMA DE AGUA POTABLE PARA EL BARRIO SHOA – LA ESPERANZA, PARROQUIA GUACHANAMÁ, CANTON PALTAS, PROVINCIA DE LOJA** |  | 274d | 2022-12-02 | 2023-12-21 |  | 154d |  |  |  | 2160h |
| 247 | 10.1 | **Parte GAD** |  | 274d | 2022-12-02 | 2023-12-21 |  | 154d |  |  |  | 2160h |
| 248 | 10.1.1 | **Ejecución del convenio obra** |  | 274d | 2022-12-02 | 2023-12-21 |  | 154d |  |  |  | 2160h |
| 249 | 10.1.1.1 | **Etapa preparatoria obra** |  | 44d | 2022-12-02 | 2023-02-02 |  | 154d |  |  |  |  |
| 250 | 10.1.1.1.1 | Elaboración de los documentos habilitantes (informe necesidad, pliegos, presupuesto, TDR, certificación presupuestaria en torno al GAD) |  | 44d | 2022-12-02 | 2023-02-02 |  | 154d | 0d | start no earlier than 2022-12-02 |  |  |
| 251 | 10.1.1.2 | **Etapa precontractual obra** |  | 20d | 2023-02-02 | 2023-03-02 |  | 154d |  |  |  |  |
| 252 | 10.1.1.2.1 | Proceso pre adjudicial (subida al portal hasta calificación) |  | 10d | 2023-02-02 | 2023-02-16 | 250 | 154d | 0d |  |  |  |
| 253 | 10.1.1.2.2 | Adjudicación |  | 10d | 2023-02-16 | 2023-03-02 | 252 | 154d | 0d |  |  |  |
| 254 | 10.1.1.3 | **Ejecución de obra** |  | 210d | 2023-03-02 | 2023-12-21 |  | 154d |  |  |  | 1080h |
| 255 | 10.1.1.3.1 | Firma del contrato, Anticipo |  | 15d | 2023-03-02 | 2023-03-23 | 253 | 154d | 0d |  |  |  |
| 256 | 10.1.1.3.2 | Etapa 1 |  | 20d | 2023-03-23 | 2023-04-20 | 255 | 154d | 0d |  |  |  |
| 257 | 10.1.1.3.3 | Etapa 2 |  | 20d | 2023-04-20 | 2023-05-18 | 256 | 154d | 0d |  |  |  |
| 258 | 10.1.1.3.4 | Etapa 3 |  | 20d | 2023-05-18 | 2023-06-15 | 257 | 154d | 0d |  |  |  |
| 259 | 10.1.1.3.5 | Solicitud de revision de Obra Finalizada y Firma de Acta entrega recepción provisional | milestone | 15d | 2023-06-15 | 2023-07-06 | 258 | 154d | 0d |  | Acta Entrega-Recepción Provisional | 120h |
| 260 | 10.1.1.3.6 | Cumplimiento del correcto funcionamiento del proyecto y Firma de Acta entrega recepción definitiva |  | 120d | 2023-07-06 | 2023-12-21 | 259 | 154d |  |  | Acta Entrega-Recepción Definitiva | 960h |
| 261 | 10.1.1.4 | **Etapa preparatoria fiscalización** |  | 44d | 2022-12-02 | 2023-02-02 |  | 154d |  |  |  |  |
| 262 | 10.1.1.4.1 | Elaboración de los documentos habilitantes (informe necesidad, pliegos, presupuesto, TDR, certificación presupuestaria en torno al GAD) |  | 44d | 2022-12-02 | 2023-02-02 | 250SS | 154d | 0d | finish no earlier than 2023-01-02 |  |  |
| 263 | 10.1.1.5 | **Etapa precontractual fiscalización** |  | 20d | 2023-02-02 | 2023-03-02 |  | 154d |  |  |  |  |
| 264 | 10.1.1.5.1 | Proceso pre adjudicial |  | 10d | 2023-02-02 | 2023-02-16 | 262 | 154d | 0d |  |  |  |
| 265 | 10.1.1.5.2 | Adjudicación |  | 10d | 2023-02-16 | 2023-03-02 | 264 | 154d | 0d |  |  |  |
| 266 | 10.1.1.6 | **Ejecución de fiscalización** |  | 210d | 2023-03-02 | 2023-12-21 |  | 154d |  |  |  | 1080h |
| 267 | 10.1.1.6.1 | Firma del contrato, Anticipo |  | 15d | 2023-03-02 | 2023-03-23 | 265 | 154d | 0d |  |  |  |
| 268 | 10.1.1.6.2 | Etapa 1 |  | 20d | 2023-03-23 | 2023-04-20 | 267 | 154d | 0d |  |  |  |
| 269 | 10.1.1.6.3 | Etapa 2 |  | 20d | 2023-04-20 | 2023-05-18 | 268 | 154d | 0d |  |  |  |
| 270 | 10.1.1.6.4 | Etapa 3 |  | 20d | 2023-05-18 | 2023-06-15 | 269 | 154d | 0d |  |  |  |
| 271 | 10.1.1.6.5 | Solicitud de revision de Obra Finalizada y Firma de Acta entrega recepción provisional | milestone | 15d | 2023-06-15 | 2023-07-06 | 270 | 154d | 0d |  | Acta Entrega-Recepción Provisional | 120h |
| 272 | 10.1.1.6.6 | Cumplimiento del correcto funcionamiento del proyecto y Firma de Acta entrega recepción definitiva |  | 120d | 2023-07-06 | 2023-12-21 | 271 | 154d |  |  | Acta Entrega-Recepción Definitiva | 960h |

| ID | WBS | Task | Type | Duration | Start | Finish | Predecessors | Total slack | Free slack | Constraint | Resources | Work |
| --- | --- | --- | --- | --- | --- | --- | --- | --- | --- | --- | --- | --- |
| 274 | 11 | **CONSTRUCCIÓN DEL SISTEMA DE AGUA POTABLE DE LA COMUNIDAD DE DALIZHE, PARROQUIA ABAÑÍN, CANTÓN ZARUMA, PROVINCIA DE EL ORO** |  | 294d | 2022-12-09 | 2024-01-25 |  | 129d |  |  |  | 2160h |
| 275 | 11.1 | **Parte GAD** |  | 294d | 2022-12-09 | 2024-01-25 |  | 129d |  |  |  | 2160h |
| 276 | 11.1.1 | **Ejecución del convenio obra** |  | 294d | 2022-12-09 | 2024-01-25 |  | 129d |  |  |  | 2160h |
| 277 | 11.1.1.1 | **Etapa preparatoria obra** |  | 44d | 2022-12-09 | 2023-02-09 |  | 129d |  |  |  |  |
| 278 | 11.1.1.1.1 | Elaboración de los documentos habilitantes (informe necesidad, pliegos, presupuesto, TDR, certificación presupuestaria en torno al GAD) |  | 44d | 2022-12-09 | 2023-02-09 |  | 129d | 0d | start no earlier than 2022-12-09 |  |  |
| 279 | 11.1.1.2 | **Etapa precontractual obra** |  | 20d | 2023-02-09 | 2023-03-09 |  | 129d |  |  |  |  |
| 280 | 11.1.1.2.1 | Proceso pre adjudicial (subida al portal hasta calificación) |  | 10d | 2023-02-09 | 2023-02-23 | 278 | 129d | 0d |  |  |  |
| 281 | 11.1.1.2.2 | Adjudicación |  | 10d | 2023-02-23 | 2023-03-09 | 280 | 129d | 0d |  |  |  |
| 282 | 11.1.1.3 | **Ejecución de obra** |  | 230d | 2023-03-09 | 2024-01-25 |  | 129d |  |  |  | 1080h |
| 283 | 11.1.1.3.1 | Firma del contrato, Anticipo |  | 15d | 2023-03-09 | 2023-03-30 | 281 | 129d | 0d |  |  |  |
| 284 | 11.1.1.3.2 | Etapa 1 |  | 20d | 2023-03-30 | 2023-04-27 | 283 | 129d | 0d |  |  |  |
| 285 | 11.1.1.3.3 | Etapa 2 |  | 20d | 2023-04-27 | 2023-05-25 | 284 | 129d | 0d |  |  |  |
| 286 | 11.1.1.3.4 | Etapa 3 |  | 20d | 2023-05-25 | 2023-06-22 | 285 | 129d | 0d |  |  |  |
| 287 | 11.1.1.3.5 | Etapa 4 |  | 20d | 2023-06-22 | 2023-07-20 | 286 | 129d | 0d |  |  |  |
| 288 | 11.1.1.3.6 | Solicitud de revision de Obra Finalizada y Firma de Acta entrega recepción provisional | milestone | 15d | 2023-07-20 | 2023-08-10 | 287 | 129d | 0d |  | Acta Entrega-Recepción Provisional | 120h |
| 289 | 11.1.1.3.7 | Cumplimiento del correcto funcionamiento del proyecto y Firma de Acta entrega recepción definitiva |  | 120d | 2023-08-10 | 2024-01-25 | 288 | 129d |  |  | Acta Entrega-Recepción Definitiva | 960h |
| 290 | 11.1.1.4 | **Etapa preparatoria fiscalización** |  | 44d | 2022-12-09 | 2023-02-09 |  | 129d |  |  |  |  |
| 291 | 11.1.1.4.1 | Elaboración de los documentos habilitantes (informe necesidad, pliegos, presupuesto, TDR, certificación presupuestaria en torno al GAD) |  | 44d | 2022-12-09 | 2023-02-09 | 278SS | 129d | 0d | finish no earlier than 2023-01-09 |  |  |
| 292 | 11.1.1.5 | **Etapa precontractual fiscalización** |  | 20d | 2023-02-09 | 2023-03-09 |  | 129d |  |  |  |  |
| 293 | 11.1.1.5.1 | Proceso pre adjudicial |  | 10d | 2023-02-09 | 2023-02-23 | 291 | 129d | 0d |  |  |  |
| 294 | 11.1.1.5.2 | Adjudicación |  | 10d | 2023-02-23 | 2023-03-09 | 293 | 129d | 0d |  |  |  |
| 295 | 11.1.1.6 | **Ejecución de fiscalización** |  | 230d | 2023-03-09 | 2024-01-25 |  | 129d |  |  |  | 1080h |
| 296 | 11.1.1.6.1 | Firma del contrato, Anticipo |  | 15d | 2023-03-09 | 2023-03-30 | 294 | 129d | 0d |  |  |  |
| 297 | 11.1.1.6.2 | Etapa 1 |  | 20d | 2023-03-30 | 2023-04-27 | 296 | 129d | 0d |  |  |  |
| 298 | 11.1.1.6.3 | Etapa 2 |  | 20d | 2023-04-27 | 2023-05-25 | 297 | 129d | 0d |  |  |  |
| 299 | 11.1.1.6.4 | Etapa 3 |  | 20d | 2023-05-25 | 2023-06-22 | 298 | 129d | 0d |  |  |  |
| 300 | 11.1.1.6.5 | Etapa 4 |  | 20d | 2023-06-22 | 2023-07-20 | 299 | 129d | 0d |  |  |  |
| 301 | 11.1.1.6.6 | Solicitud de revision de Obra Finalizada y Firma de Acta entrega recepción provisional | milestone | 15d | 2023-07-20 | 2023-08-10 | 300 | 129d | 0d |  | Acta Entrega-Recepción Provisional | 120h |
| 302 | 11.1.1.6.7 | Cumplimiento del correcto funcionamiento del proyecto y Firma de Acta entrega recepción definitiva |  | 120d | 2023-08-10 | 2024-01-25 | 301 | 129d |  |  | Acta Entrega-Recepción Definitiva | 960h |

| ID | WBS | Task | Type | Duration | Start | Finish | Predecessors | Total slack | Free slack | Constraint | Resources | Work |
| --- | --- | --- | --- | --- | --- | --- | --- | --- | --- | --- | --- | --- |
| 304 | 12 | **ESTUDIOS Y DISEÑOS DEFINITIVOS DEL SISTEMA REGIONAL DE AGUA POTABLE PARA LOS BARRIOS CASHARRUMI, MULLUNAMÁ Y LA ZANJA, PARROQUIA CELICA, CANTÓN CELICA, PROVINCIA DE LOJA** |  | 314d | 2022-12-09 | 2024-02-22 |  | 109d |  |  |  | 2160h |
| 305 | 12.1 | **Parte GAD** |  | 314d | 2022-12-09 | 2024-02-22 |  | 109d |  |  |  | 2160h |
| 306 | 12.1.1 | **Ejecución del convenio obra** |  | 314d | 2022-12-09 | 2024-02-22 |  | 109d |  |  |  | 2160h |
| 307 | 12.1.1.1 | **Etapa preparatoria obra** |  | 44d | 2022-12-09 | 2023-02-09 |  | 109d |  |  |  |  |
| 308 | 12.1.1.1.1 | Elaboración de los documentos habilitantes (informe necesidad, pliegos, presupuesto, TDR, certificación presupuestaria en torno al GAD) |  | 44d | 2022-12-09 | 2023-02-09 |  | 109d | 0d | start no earlier than 2022-12-09 |  |  |
| 309 | 12.1.1.2 | **Etapa precontractual obra** |  | 20d | 2023-02-09 | 2023-03-09 |  | 109d |  |  |  |  |
| 310 | 12.1.1.2.1 | Proceso pre adjudicial (subida al portal hasta calificación) |  | 10d | 2023-02-09 | 2023-02-23 | 308 | 109d | 0d |  |  |  |
| 311 | 12.1.1.2.2 | Adjudicación |  | 10d | 2023-02-23 | 2023-03-09 | 310 | 109d | 0d |  |  |  |
| 312 | 12.1.1.3 | **Ejecución de obra** |  | 250d | 2023-03-09 | 2024-02-22 |  | 109d |  |  |  | 1080h |
| 313 | 12.1.1.3.1 | Firma del contrato, Anticipo |  | 15d | 2023-03-09 | 2023-03-30 | 311 | 109d | 0d |  |  |  |
| 314 | 12.1.1.3.2 | Etapa 1 |  | 20d | 2023-03-30 | 2023-04-27 | 313 | 109d | 0d |  |  |  |
| 315 | 12.1.1.3.3 | Etapa 2 |  | 20d | 2023-04-27 | 2023-05-25 | 314 | 109d | 0d |  |  |  |
| 316 | 12.1.1.3.4 | Etapa 3 |  | 20d | 2023-05-25 | 2023-06-22 | 315 | 109d | 0d |  |  |  |
| 317 | 12.1.1.3.5 | Etapa 4 |  | 20d | 2023-06-22 | 2023-07-20 | 316 | 109d | 0d |  |  |  |
| 318 | 12.1.1.3.6 | Etapa 5 |  | 20d | 2023-07-20 | 2023-08-17 | 317 | 109d | 0d |  |  |  |
| 319 | 12.1.1.3.7 | Solicitud de revision de Obra Finalizada y Firma de Acta entrega recepción provisional | milestone | 15d | 2023-08-17 | 2023-09-07 | 318 | 109d | 0d |  | Acta Entrega-Recepción Provisional | 120h |
| 320 | 12.1.1.3.8 | Cumplimiento del correcto funcionamiento del proyecto y Firma de Acta entrega recepción definitiva |  | 120d | 2023-09-07 | 2024-02-22 | 319 | 109d |  |  | Acta Entrega-Recepción Definitiva | 960h |
| 321 | 12.1.1.4 | **Etapa preparatoria fiscalización** |  | 44d | 2022-12-09 | 2023-02-09 |  | 109d |  |  |  |  |
| 322 | 12.1.1.4.1 | Elaboración de los documentos habilitantes (informe necesidad, pliegos, presupuesto, TDR, certificación presupuestaria en torno al GAD) |  | 44d | 2022-12-09 | 2023-02-09 | 308SS | 109d | 0d | finish no earlier than 2023-01-09 |  |  |
| 323 | 12.1.1.5 | **Etapa precontractual fiscalización** |  | 20d | 2023-02-09 | 2023-03-09 |  | 109d |  |  |  |  |
| 324 | 12.1.1.5.1 | Proceso pre adjudicial |  | 10d | 2023-02-09 | 2023-02-23 | 322 | 109d | 0d |  |  |  |
| 325 | 12.1.1.5.2 | Adjudicación |  | 10d | 2023-02-23 | 2023-03-09 | 324 | 109d | 0d |  |  |  |
| 326 | 12.1.1.6 | **Ejecución de fiscalización** |  | 250d | 2023-03-09 | 2024-02-22 |  | 109d |  |  |  | 1080h |
| 327 | 12.1.1.6.1 | Firma del contrato, Anticipo |  | 15d | 2023-03-09 | 2023-03-30 | 325 | 109d | 0d |  |  |  |
| 328 | 12.1.1.6.2 | Etapa 1 |  | 20d | 2023-03-30 | 2023-04-27 | 327 | 109d | 0d |  |  |  |
| 329 | 12.1.1.6.3 | Etapa 2 |  | 20d | 2023-04-27 | 2023-05-25 | 328 | 109d | 0d |  |  |  |
| 330 | 12.1.1.6.4 | Etapa 3 |  | 20d | 2023-05-25 | 2023-06-22 | 329 | 109d | 0d |  |  |  |
| 331 | 12.1.1.6.5 | Etapa 4 |  | 20d | 2023-06-22 | 2023-07-20 | 330 | 109d | 0d |  |  |  |
| 332 | 12.1.1.6.6 | Etapa 5 |  | 20d | 2023-07-20 | 2023-08-17 | 331 | 109d | 0d |  |  |  |
| 333 | 12.1.1.6.7 | Solicitud de revision de Obra Finalizada y Firma de Acta entrega recepción provisional | milestone | 15d | 2023-08-17 | 2023-09-07 | 332 | 109d | 0d |  | Acta Entrega-Recepción Provisional | 120h |
| 334 | 12.1.1.6.8 | Cumplimiento del correcto funcionamiento del proyecto y Firma de Acta entrega recepción definitiva |  | 120d | 2023-09-07 | 2024-02-22 | 333 | 109d |  |  | Acta Entrega-Recepción Definitiva | 960h |
| 336 | 13 | CONVENIOS 2023 | manual | 1d | 2023-02-15 | 2023-02-15 |  |  |  |  |  |  |

| ID | WBS | Task | Duration | Start | Finish | Predecessors | Total slack | Free slack | Constraint |
| --- | --- | --- | --- | --- | --- | --- | --- | --- | --- |
| 337 | 14 | **Paquete 1 - Esmeraldas (Santo Domingo de Onzole, Colón de Onzole, Zancudo de Onzole), Morona Santiago (Taisha), Chimborazo (Alausí), Carchi (Chiles Alto y Bajo)** | 374d | 2023-01-18 | 2024-06-25 |  | 21d |  |  |
| 338 | 14.1 | **Avance MAATE** | 59d | 2023-01-18 | 2023-04-11 |  | 21d |  |  |
| 339 | 14.1.1 | **Cartera** | 3d | 2023-01-18 | 2023-01-23 |  | 21d |  |  |
| 340 | 14.1.1.1 | **Verificación de cartera** | 3d | 2023-01-18 | 2023-01-23 |  | 21d |  |  |
| 341 | 14.1.1.1.1 | Identificación | 2d | 2023-01-18 | 2023-01-20 |  | 21d | 0d | start no earlier than 2023-01-18 |
| 342 | 14.1.1.1.2 | Verificación de documentación disponible (viabilidad técnica, uso y aprovechamiento del agua, escritura) | 1d | 2023-01-20 | 2023-01-23 | 341 | 21d | 0d |  |
| 343 | 14.1.2 | **Revisión de documentos del proyectos** | 8d | 2023-01-23 | 2023-02-02 |  | 21d |  |  |
| 344 | 14.1.2.1 | **Revisión de documentos del proyectos** | 8d | 2023-01-23 | 2023-02-02 |  | 21d |  |  |
| 345 | 14.1.2.1.1 | Visita de campo | 3d | 2023-01-23 | 2023-01-26 | 342 | 21d | 0d |  |
| 346 | 14.1.2.1.2 | Revisión de la documentación habilitantate (memorias técnicas, especificaciones técnicas, plan ambiental, actas de socialización, presupuesto) con observaciones | 5d | 2023-01-26 | 2023-02-02 | 345 | 21d | 0d |  |
| 347 | 14.1.3 | **Firma del convenio parte MAATE** | 19d | 2023-02-02 | 2023-03-01 |  | 21d |  |  |
| 348 | 14.1.3.1 | **Subsanación de observaciones** | 8d | 2023-02-02 | 2023-02-14 |  | 21d |  |  |
| 349 | 14.1.3.1.1 | Subsanación observaciones tecnicas y presupuestaria | 8d | 2023-02-02 | 2023-02-14 | 346 | 21d | 0d |  |
| 350 | 14.1.3.2 | **Informe de necesidad** | 2d | 2023-02-14 | 2023-02-16 |  | 21d |  |  |
| 351 | 14.1.3.2.1 | Informe de necesidad de obra y fiscalización (justificaciones técnicas, sociales, economicas para la consideración del proyecto, presupuesto actualizado) | 2d | 2023-02-14 | 2023-02-16 | 349 | 21d | 0d |  |
| 352 | 14.1.3.3 | **Reforma al PAP** | 4d | 2023-02-16 | 2023-02-22 |  | 24d |  |  |
| 353 | 14.1.3.3.1 | Reforma al PAP | 2d | 2023-02-16 | 2023-02-20 | 351 | 24d | 0d |  |
| 354 | 14.1.3.3.2 | Aprobación de PAP | 2d | 2023-02-20 | 2023-02-22 | 353 | 24d | 3d |  |
| 355 | 14.1.3.4 | **Aval jurídico** | 7d | 2023-02-16 | 2023-02-27 |  | 21d |  |  |
| 356 | 14.1.3.4.1 | Compilación del documento que sustenta (viablidad técnica, presupuesto actualizado e informe de necesidad) | 1d | 2023-02-16 | 2023-02-17 | 351 | 21d | 0d |  |
| 357 | 14.1.3.4.2 | Elaboración del borrador del convenio | 1d | 2023-02-17 | 2023-02-20 | 356 | 21d | 0d |  |
| 358 | 14.1.3.4.3 | Emisión de aval jurídico | 5d | 2023-02-20 | 2023-02-27 | 357 | 21d | 0d |  |
| 359 | 14.1.3.5 | **Autorización de gasto** | 2d | 2023-02-27 | 2023-03-01 |  | 21d |  |  |
| 360 | 14.1.3.5.1 | Compilación de (viablidad técnica, presupuesto actualizado, informe de necesidad y aval jurídico) Solicitud de Autorización de gasto para transferencia | 1d | 2023-02-27 | 2023-02-28 | 354, 358 | 21d | 0d |  |
| 361 | 14.1.3.5.2 | Emisión de autorización de gasto | 1d | 2023-02-28 | 2023-03-01 | 360 | 21d | 0d |  |

| ID | WBS | Task | Duration | Start | Finish | Predecessors | Total slack | Free slack | Constraint |
| --- | --- | --- | --- | --- | --- | --- | --- | --- | --- |
| 362 | 14.1.4 | **Firma de convenio validaciones externas** | 14d | 2023-02-27 | 2023-03-17 |  | 21d |  |  |
| 363 | 14.1.4.1 | **Aval del Ministerio de Finanzas y certificación presupuestaria** | 12d | 2023-03-01 | 2023-03-17 | 361 | 21d |  |  |
| 364 | 14.1.4.1.1 | Solicitud a CGPGE de certificación de recursos para el Ministerio de Finanzas | 1d | 2023-03-01 | 2023-03-02 | 361 | 21d | 0d |  |
| 365 | 14.1.4.1.2 | Elaboración de Solicitud de certificación presupuestaria al Ministerio de Finanzas | 1d | 2023-03-01 | 2023-03-02 | 361 | 21d | 0d |  |
| 366 | 14.1.4.1.3 | Despacho de Solicitud de certificación presupuestaria al Ministerio de Finanzas | 1d | 2023-03-02 | 2023-03-03 | 364, 365 | 21d | 0d |  |
| 367 | 14.1.4.1.4 | Respuesta de Ministerio de Finanzas sobre certificación presupuestaria | 9d | 2023-03-03 | 2023-03-16 | 366 | 21d | 0d |  |
| 368 | 14.1.4.1.5 | Certificación presupuestaria | 1d | 2023-03-16 | 2023-03-17 | 367 | 21d | 0d |  |
| 369 | 14.1.4.2 | **Acuerdo con GAD** | 10d | 2023-02-27 | 2023-03-13 |  | 25d |  |  |
| 370 | 14.1.4.2.1 | Negociacion de términos convenio con GAD (con base en borrador) | 5d | 2023-02-27 | 2023-03-06 | 358 | 25d | 0d |  |
| 371 | 14.1.4.2.2 | Recopilación de documentos hablitantes para firma (credenciales de los alcaldes, emisión de certificado de cuenta bancaria para transferencia, certificación presupuestaria de la contraparte financiera, certificación de aprobación de términos del convenio | 5d | 2023-03-06 | 2023-03-13 | 370 | 25d | 4d |  |
| 372 | 14.1.5 | **Firma convenio suscripción** | 7d | 2023-03-17 | 2023-03-28 |  | 21d |  |  |
| 373 | 14.1.5.1 | **Aval jurídico para firma de convenio** | 4d | 2023-03-17 | 2023-03-23 |  | 21d |  |  |
| 374 | 14.1.5.1.1 | Solicitud al jurídico de revisión de documentación hablitante del convenio (credenciales de los alcaldes, emisión de certificado de cuenta bancaria para transferencia, certificación presupuestaria de la contraparte financiera, certificación de aprobación | 1d | 2023-03-17 | 2023-03-20 | 368, 371 | 21d | 0d |  |
| 375 | 14.1.5.1.2 | Informe de procedencia para la firma del convenio | 1d | 2023-03-17 | 2023-03-20 | 368, 371 | 21d | 0d |  |
| 376 | 14.1.5.1.3 | Informe de jurídico para el Señor Ministro | 3d | 2023-03-20 | 2023-03-23 | 374, 375 | 21d | 0d |  |
| 377 | 14.1.5.2 | **Sucripción de convenio** | 3d | 2023-03-23 | 2023-03-28 |  | 21d |  |  |
| 378 | 14.1.5.2.1 | Firma del Señor Ministro | 2d | 2023-03-23 | 2023-03-27 | 376 | 21d | 0d |  |
| 379 | 14.1.5.2.2 | Firma del GAD | 1d | 2023-03-27 | 2023-03-28 | 378 | 21d | 0d |  |
| 380 | 14.1.6 | **Transferencia de recursos** | 10d | 2023-03-28 | 2023-04-11 |  | 21d |  |  |
| 381 | 14.1.6.1 | **Transferencia de recursos** | 10d | 2023-03-28 | 2023-04-11 |  | 21d |  |  |
| 382 | 14.1.6.1.1 | Solicitud de transferencia (certificario bancario GAD, decreto ejecutivo N°21, aprobación términos del convenio GAD, certificación presupuestaria GAD, certificación presupuestaria MAATE, convenio firmado por GAD y MAATE, credencial y cédula Alcalde GAD | 2d | 2023-03-28 | 2023-03-30 | 379 | 21d | 0d |  |
| 383 | 14.1.6.1.2 | Acreditación de Recursos | 8d | 2023-03-30 | 2023-04-11 | 382 | 21d | 0d |  |
| 384 | 14.2 | **Parte GAD** | 315d | 2023-04-11 | 2024-06-25 |  | 21d |  |  |
| 385 | 14.2.1 | **Ejecución del convenio obra** | 315d | 2023-04-11 | 2024-06-25 |  | 21d |  |  |
| 386 | 14.2.1.1 | **Etapa preparatoria obra** | 65d | 2023-04-11 | 2023-07-11 |  | 21d |  |  |
| 387 | 14.2.1.1.1 | Elaboración de los documentos habilitantes (informe necesidad, pliegos, presupuesto, TDR, certificación presupuestaria en torno al GAD) | 65d | 2023-04-11 | 2023-07-11 | 383 | 21d | 0d | finish no earlier than 2023-05-11 |

| ID | WBS | Task | Type | Duration | Start | Finish | Predecessors | Total slack | Free slack | Constraint |
| --- | --- | --- | --- | --- | --- | --- | --- | --- | --- | --- |
| 388 | 14.2.1.2 | **Etapa precontractual obra** |  | 20d | 2023-07-11 | 2023-08-08 |  | 21d |  |  |
| 389 | 14.2.1.2.1 | Proceso pre adjudicial (subida al portal hasta calificación) |  | 10d | 2023-07-11 | 2023-07-25 | 387 | 21d | 0d |  |
| 390 | 14.2.1.2.2 | Adjudicación |  | 10d | 2023-07-25 | 2023-08-08 | 389 | 21d | 0d |  |
| 391 | 14.2.1.3 | **Ejecución de obra** |  | 230d | 2023-08-08 | 2024-06-25 |  | 21d |  |  |
| 392 | 14.2.1.3.1 | Firma del contrato, Anticipo |  | 15d | 2023-08-08 | 2023-08-29 | 390 | 21d | 0d |  |
| 393 | 14.2.1.3.2 | Etapa 1 |  | 20d | 2023-08-29 | 2023-09-26 | 392 | 21d | 0d |  |
| 394 | 14.2.1.3.3 | Etapa 2 |  | 20d | 2023-09-26 | 2023-10-24 | 393 | 21d | 0d |  |
| 395 | 14.2.1.3.4 | Etapa 3 |  | 20d | 2023-10-24 | 2023-11-21 | 394 | 21d | 0d |  |
| 396 | 14.2.1.3.5 | Etapa 4 |  | 20d | 2023-11-21 | 2023-12-19 | 395 | 21d | 0d |  |
| 397 | 14.2.1.3.6 | Solicitud de revision de Obra Finalizada y Firma de Acta entrega recepción provisional | milestone | 15d | 2023-12-19 | 2024-01-09 | 396 | 21d | 0d |  |
| 398 | 14.2.1.3.7 | Cumplimiento del correcto funcionamiento del proyecto y Firma de Acta entrega recepción definitiva |  | 120d | 2024-01-09 | 2024-06-25 | 397 | 21d |  |  |
| 399 | 14.2.1.4 | **Etapa preparatoria fiscalización** |  | 65d | 2023-04-11 | 2023-07-11 |  | 21d |  |  |
| 400 | 14.2.1.4.1 | Elaboración de los documentos habilitantes (informe necesidad, pliegos, presupuesto, TDR, certificación preupuestaria en torno al GAD |  | 65d | 2023-04-11 | 2023-07-11 | 383 | 21d | 0d | start no earlier than 2023-04-11 |
| 401 | 14.2.1.5 | **Etapa precontractual fiscalización** |  | 20d | 2023-07-11 | 2023-08-08 |  | 21d |  |  |
| 402 | 14.2.1.5.1 | Proceso pre adjudicial (subida al portal hasta calificación) |  | 10d | 2023-07-11 | 2023-07-25 | 400 | 21d | 0d |  |
| 403 | 14.2.1.5.2 | Adjudicación |  | 10d | 2023-07-25 | 2023-08-08 | 402 | 21d | 0d |  |
| 404 | 14.2.1.6 | **Ejecución de fiscalización** |  | 230d | 2023-08-08 | 2024-06-25 |  | 21d |  |  |
| 405 | 14.2.1.6.1 | Firma del contrato, Anticipo |  | 15d | 2023-08-08 | 2023-08-29 | 403 | 21d | 0d |  |
| 406 | 14.2.1.6.2 | Etapa 1 |  | 20d | 2023-08-29 | 2023-09-26 | 405 | 21d | 0d |  |
| 407 | 14.2.1.6.3 | Etapa 2 |  | 20d | 2023-09-26 | 2023-10-24 | 406 | 21d | 0d |  |
| 408 | 14.2.1.6.4 | Etapa 3 |  | 20d | 2023-10-24 | 2023-11-21 | 407 | 21d | 0d |  |
| 409 | 14.2.1.6.5 | Etapa 4 |  | 20d | 2023-11-21 | 2023-12-19 | 408 | 21d | 0d |  |
| 410 | 14.2.1.6.6 | Solicitud de revision de Obra Finalizada y Firma de Acta entrega recepción provisional | milestone | 15d | 2023-12-19 | 2024-01-09 | 409 | 21d | 0d |  |
| 411 | 14.2.1.6.7 | Cumplimiento del correcto funcionamiento del proyecto y Firma de Acta entrega recepción definitiva |  | 120d | 2024-01-09 | 2024-06-25 | 410 | 21d |  |  |

| ID | WBS | Task | Duration | Start | Finish | Predecessors | Total slack | Free slack | Constraint |
| --- | --- | --- | --- | --- | --- | --- | --- | --- | --- |
| 413 | 15 | **Paquete 2 - Manabí (La Bonilla, Churro y Aguacate)** | 374d | 2023-02-01 | 2024-07-09 |  | 11d |  |  |
| 414 | 15.1 | **Avance MAATE** | 59d | 2023-02-01 | 2023-04-25 |  | 11d |  |  |
| 415 | 15.1.1 | **Cartera** | 3d | 2023-02-01 | 2023-02-06 |  | 11d |  |  |
| 416 | 15.1.1.1 | **Verificación de cartera** | 3d | 2023-02-01 | 2023-02-06 |  | 11d |  |  |
| 417 | 15.1.1.1.1 | Identificación | 2d | 2023-02-01 | 2023-02-03 |  | 11d | 0d | start no earlier than 2023-02-01 |
| 418 | 15.1.1.1.2 | Verificación de documentación disponible (viabilidad técnica, uso y aprovechamiento del agua, escritura) | 1d | 2023-02-03 | 2023-02-06 | 417 | 11d | 0d |  |
| 419 | 15.1.2 | **Revisión de documentos del proyectos** | 8d | 2023-02-06 | 2023-02-16 |  | 11d |  |  |
| 420 | 15.1.2.1 | **Revisión de documentos del proyectos** | 8d | 2023-02-06 | 2023-02-16 |  | 11d |  |  |
| 421 | 15.1.2.1.1 | Visita de campo | 3d | 2023-02-06 | 2023-02-09 | 418 | 11d | 0d |  |
| 422 | 15.1.2.1.2 | Revisión de la documentación habilitantate (memorias técnicas, especificaciones técnicas, plan ambiental, actas de socialización, presupuesto) con observaciones | 5d | 2023-02-09 | 2023-02-16 | 421 | 11d | 0d |  |
| 423 | 15.1.3 | **Firma del convenio parte MAATE** | 19d | 2023-02-16 | 2023-03-15 |  | 11d |  |  |
| 424 | 15.1.3.1 | **Subsanación de observaciones** | 8d | 2023-02-16 | 2023-02-28 |  | 11d |  |  |
| 425 | 15.1.3.1.1 | Subsanación observaciones tecnicas y presupuestaria | 8d | 2023-02-16 | 2023-02-28 | 422 | 11d | 0d |  |
| 426 | 15.1.3.2 | **Informe de necesidad** | 2d | 2023-02-28 | 2023-03-02 |  | 11d |  |  |
| 427 | 15.1.3.2.1 | Informe de necesidad de obra y fiscalización (justificaciones técnicas, sociales, economicas para la consideración del proyecto, presupuesto actualizado) | 2d | 2023-02-28 | 2023-03-02 | 425 | 11d | 0d |  |
| 428 | 15.1.3.3 | **Reforma al PAP** | 4d | 2023-03-02 | 2023-03-08 |  | 14d |  |  |
| 429 | 15.1.3.3.1 | Reforma al PAP | 2d | 2023-03-02 | 2023-03-06 | 427 | 14d | 0d |  |
| 430 | 15.1.3.3.2 | Aprobación de PAP | 2d | 2023-03-06 | 2023-03-08 | 429 | 14d | 3d |  |
| 431 | 15.1.3.4 | **Aval jurídico** | 7d | 2023-03-02 | 2023-03-13 |  | 11d |  |  |
| 432 | 15.1.3.4.1 | Compilación del documento que sustenta (viablidad técnica, presupuesto actualizado e informe de necesidad) | 1d | 2023-03-02 | 2023-03-03 | 427 | 11d | 0d |  |
| 433 | 15.1.3.4.2 | Elaboración del borrador del convenio | 1d | 2023-03-03 | 2023-03-06 | 432 | 11d | 0d |  |
| 434 | 15.1.3.4.3 | Emisión de aval jurídico | 5d | 2023-03-06 | 2023-03-13 | 433 | 11d | 0d |  |
| 435 | 15.1.3.5 | **Autorización de gasto** | 2d | 2023-03-13 | 2023-03-15 |  | 11d |  |  |
| 436 | 15.1.3.5.1 | Compilación de (viablidad técnica, presupuesto actualizado, informe de necesidad y aval jurídico) Solicitud de Autorización de gasto para transferencia | 1d | 2023-03-13 | 2023-03-14 | 430, 434 | 11d | 0d |  |
| 437 | 15.1.3.5.2 | Emisión de autorización de gasto | 1d | 2023-03-14 | 2023-03-15 | 436 | 11d | 0d |  |

| ID | WBS | Task | Duration | Start | Finish | Predecessors | Total slack | Free slack | Constraint |
| --- | --- | --- | --- | --- | --- | --- | --- | --- | --- |
| 438 | 15.1.4 | **Firma de convenio validaciones externas** | 14d | 2023-03-13 | 2023-03-31 |  | 11d |  |  |
| 439 | 15.1.4.1 | **Aval del Ministerio de Finanzas y certificación presupuestaria** | 12d | 2023-03-15 | 2023-03-31 | 437 | 11d |  |  |
| 440 | 15.1.4.1.1 | Solicitud a CGPGE de certificación de recursos para el Ministerio de Finanzas | 1d | 2023-03-15 | 2023-03-16 | 437 | 11d | 0d |  |
| 441 | 15.1.4.1.2 | Elaboración de Solicitud de certificación presupuestaria al Ministerio de Finanzas | 1d | 2023-03-15 | 2023-03-16 | 437 | 11d | 0d |  |
| 442 | 15.1.4.1.3 | Despacho de Solicitud de certificación presupuestaria al Ministerio de Finanzas | 1d | 2023-03-16 | 2023-03-17 | 440, 441 | 11d | 0d |  |
| 443 | 15.1.4.1.4 | Respuesta de Ministerio de Finanzas sobre certificación presupuestaria | 9d | 2023-03-17 | 2023-03-30 | 442 | 11d | 0d |  |
| 444 | 15.1.4.1.5 | Certificación presupuestaria | 1d | 2023-03-30 | 2023-03-31 | 443 | 11d | 0d |  |
| 445 | 15.1.4.2 | **Acuerdo con GAD** | 10d | 2023-03-13 | 2023-03-27 |  | 15d |  |  |
| 446 | 15.1.4.2.1 | Negociacion de términos convenio con GAD (con base en borrador) | 5d | 2023-03-13 | 2023-03-20 | 434 | 15d | 0d |  |
| 447 | 15.1.4.2.2 | Recopilación de documentos hablitantes para firma (credenciales de los alcaldes, emisión de certificado de cuenta bancaria para transferencia, certificación presupuestaria de la contraparte financiera, certificación de aprobación de términos del convenio | 5d | 2023-03-20 | 2023-03-27 | 446 | 15d | 4d |  |
| 448 | 15.1.5 | **Firma convenio suscripción** | 7d | 2023-03-31 | 2023-04-11 |  | 11d |  |  |
| 449 | 15.1.5.1 | **Aval jurídico para firma de convenio** | 4d | 2023-03-31 | 2023-04-06 |  | 11d |  |  |
| 450 | 15.1.5.1.1 | Solicitud al jurídico de revisión de documentación hablitante del convenio (credenciales de los alcaldes, emisión de certificado de cuenta bancaria para transferencia, certificación presupuestaria de la contraparte financiera, certificación de aprobación | 1d | 2023-03-31 | 2023-04-03 | 444, 447 | 11d | 0d |  |
| 451 | 15.1.5.1.2 | Informe de procedencia para la firma del convenio | 1d | 2023-03-31 | 2023-04-03 | 444, 447 | 11d | 0d |  |
| 452 | 15.1.5.1.3 | Informe de jurídico para el Señor Ministro | 3d | 2023-04-03 | 2023-04-06 | 450, 451 | 11d | 0d |  |
| 453 | 15.1.5.2 | **Sucripción de convenio** | 3d | 2023-04-06 | 2023-04-11 |  | 11d |  |  |
| 454 | 15.1.5.2.1 | Firma del Señor Ministro | 2d | 2023-04-06 | 2023-04-10 | 452 | 11d | 0d |  |
| 455 | 15.1.5.2.2 | Firma del GAD | 1d | 2023-04-10 | 2023-04-11 | 454 | 11d | 0d |  |
| 456 | 15.1.6 | **Transferencia de recursos** | 10d | 2023-04-11 | 2023-04-25 |  | 11d |  |  |
| 457 | 15.1.6.1 | **Transferencia de recursos** | 10d | 2023-04-11 | 2023-04-25 |  | 11d |  |  |
| 458 | 15.1.6.1.1 | Solicitud de transferencia (certificario bancario GAD, decreto ejecutivo N°21, aprobación términos del convenio GAD, certificación presupuestaria GAD, certificación presupuestaria MAATE, convenio firmado por GAD y MAATE, credencial y cédula Alcalde GAD | 2d | 2023-04-11 | 2023-04-13 | 455 | 11d | 0d |  |
| 459 | 15.1.6.1.2 | Acreditación de Recursos | 8d | 2023-04-13 | 2023-04-25 | 458 | 11d | 0d |  |
| 460 | 15.2 | **Parte GAD** | 315d | 2023-04-25 | 2024-07-09 |  | 11d |  |  |
| 461 | 15.2.1 | **Ejecución del convenio obra** | 315d | 2023-04-25 | 2024-07-09 |  | 11d |  |  |
| 462 | 15.2.1.1 | **Etapa preparatoria obra** | 65d | 2023-04-25 | 2023-07-25 |  | 11d |  |  |
| 463 | 15.2.1.1.1 | Elaboración de los documentos habilitantes (informe necesidad, pliegos, presupuesto, TDR, certificación presupuestaria en torno al GAD) | 65d | 2023-04-25 | 2023-07-25 | 459 | 11d | 0d | finish no earlier than 2023-05-11 |

| ID | WBS | Task | Type | Duration | Start | Finish | Predecessors | Total slack | Free slack | Constraint |
| --- | --- | --- | --- | --- | --- | --- | --- | --- | --- | --- |
| 464 | 15.2.1.2 | **Etapa precontractual obra** |  | 20d | 2023-07-25 | 2023-08-22 |  | 11d |  |  |
| 465 | 15.2.1.2.1 | Proceso pre adjudicial (subida al portal hasta calificación) |  | 10d | 2023-07-25 | 2023-08-08 | 463 | 11d | 0d |  |
| 466 | 15.2.1.2.2 | Adjudicación |  | 10d | 2023-08-08 | 2023-08-22 | 465 | 11d | 0d |  |
| 467 | 15.2.1.3 | **Ejecución de obra** |  | 230d | 2023-08-22 | 2024-07-09 |  | 11d |  |  |
| 468 | 15.2.1.3.1 | Firma del contrato, Anticipo |  | 15d | 2023-08-22 | 2023-09-12 | 466 | 11d | 0d |  |
| 469 | 15.2.1.3.2 | Etapa 1 |  | 20d | 2023-09-12 | 2023-10-10 | 468 | 11d | 0d |  |
| 470 | 15.2.1.3.3 | Etapa 2 |  | 20d | 2023-10-10 | 2023-11-07 | 469 | 11d | 0d |  |
| 471 | 15.2.1.3.4 | Etapa 3 |  | 20d | 2023-11-07 | 2023-12-05 | 470 | 11d | 0d |  |
| 472 | 15.2.1.3.5 | Etapa 4 |  | 20d | 2023-12-05 | 2024-01-02 | 471 | 11d | 0d |  |
| 473 | 15.2.1.3.6 | Solicitud de revision de Obra Finalizada y Firma de Acta entrega recepción provisional | milestone | 15d | 2024-01-02 | 2024-01-23 | 472 | 11d | 0d |  |
| 474 | 15.2.1.3.7 | Cumplimiento del correcto funcionamiento del proyecto y Firma de Acta entrega recepción definitiva |  | 120d | 2024-01-23 | 2024-07-09 | 473 | 11d |  |  |
| 475 | 15.2.1.4 | **Etapa preparatoria fiscalización** |  | 65d | 2023-04-25 | 2023-07-25 |  | 11d |  |  |
| 476 | 15.2.1.4.1 | Elaboración de los documentos habilitantes (informe necesidad, pliegos, presupuesto, TDR, certificación presupuestaria en torno al GAD) |  | 65d | 2023-04-25 | 2023-07-25 | 459 | 11d | 0d | start no earlier than 2023-04-11 |
| 477 | 15.2.1.5 | **Etapa precontractual fiscalización** |  | 20d | 2023-07-25 | 2023-08-22 |  | 11d |  |  |
| 478 | 15.2.1.5.1 | Proceso pre adjudicial (subida al portal hasta calificación) |  | 10d | 2023-07-25 | 2023-08-08 | 476 | 11d | 0d |  |
| 479 | 15.2.1.5.2 | Adjudicación |  | 10d | 2023-08-08 | 2023-08-22 | 478 | 11d | 0d |  |
| 480 | 15.2.1.6 | **Ejecución de fiscalización** |  | 230d | 2023-08-22 | 2024-07-09 |  | 11d |  |  |
| 481 | 15.2.1.6.1 | Firma del contrato, Anticipo |  | 15d | 2023-08-22 | 2023-09-12 | 479 | 11d | 0d |  |
| 482 | 15.2.1.6.2 | Etapa 1 |  | 20d | 2023-09-12 | 2023-10-10 | 481 | 11d | 0d |  |
| 483 | 15.2.1.6.3 | Etapa 2 |  | 20d | 2023-10-10 | 2023-11-07 | 482 | 11d | 0d |  |
| 484 | 15.2.1.6.4 | Etapa 3 |  | 20d | 2023-11-07 | 2023-12-05 | 483 | 11d | 0d |  |
| 485 | 15.2.1.6.5 | Etapa 4 |  | 20d | 2023-12-05 | 2024-01-02 | 484 | 11d | 0d |  |
| 486 | 15.2.1.6.6 | Solicitud de revision de Obra Finalizada y Firma de Acta entrega recepción provisional | milestone | 15d | 2024-01-02 | 2024-01-23 | 485 | 11d | 0d |  |
| 487 | 15.2.1.6.7 | Cumplimiento del correcto funcionamiento del proyecto y Firma de Acta entrega recepción definitiva |  | 120d | 2024-01-23 | 2024-07-09 | 486 | 11d |  |  |

| ID | WBS | Task | Duration | Start | Finish | Predecessors | Total slack | Free slack | Constraint |
| --- | --- | --- | --- | --- | --- | --- | --- | --- | --- |
| 489 | 16 | **Paquete 3 - El Oro (El Guabo), Morona Santiago (Twintza, Palora), Carchi (Bolívar)** | 375d | 2023-02-15 | 2024-07-24 |  | 0d |  |  |
| 490 | 16.1 | **Avance MAATE** | 59d | 2023-02-15 | 2023-05-09 |  | 0d |  |  |
| 491 | 16.1.1 | **Cartera** | 3d | 2023-02-15 | 2023-02-20 |  | 0d |  |  |
| 492 | 16.1.1.1 | **Verificación de cartera** | 3d | 2023-02-15 | 2023-02-20 |  | 0d |  |  |
| 493 | 16.1.1.1.1 | Identificación | 2d | 2023-02-15 | 2023-02-17 |  | 0d |  | start no earlier than 2023-02-15 |
| 494 | 16.1.1.1.2 | Verificación de documentación disponible (viabilidad técnica, uso y aprovechamiento del agua, escritura) | 1d | 2023-02-17 | 2023-02-20 | 493 | 0d |  |  |
| 495 | 16.1.2 | **Revisión de documentos del proyectos** | 8d | 2023-02-20 | 2023-03-02 |  | 0d |  |  |
| 496 | 16.1.2.1 | **Revisión de documentos del proyectos** | 8d | 2023-02-20 | 2023-03-02 |  | 0d |  |  |
| 497 | 16.1.2.1.1 | Visita de campo | 3d | 2023-02-20 | 2023-02-23 | 494 | 0d |  |  |
| 498 | 16.1.2.1.2 | Revisión de la documentación habilitantate (memorias técnicas, especificaciones técnicas, plan ambiental, actas de socialización, presupuesto) con observaciones | 5d | 2023-02-23 | 2023-03-02 | 497 | 0d |  |  |
| 499 | 16.1.3 | **Firma del convenio parte MAATE** | 19d | 2023-03-02 | 2023-03-29 |  | 0d |  |  |
| 500 | 16.1.3.1 | **Subsanación de observaciones** | 8d | 2023-03-02 | 2023-03-14 |  | 0d |  |  |
| 501 | 16.1.3.1.1 | Subsanación observaciones tecnicas y presupuestaria | 8d | 2023-03-02 | 2023-03-14 | 498 | 0d |  |  |
| 502 | 16.1.3.2 | **Informe de necesidad** | 2d | 2023-03-14 | 2023-03-16 |  | 0d |  |  |
| 503 | 16.1.3.2.1 | Informe de necesidad de obra y fiscalización (justificaciones técnicas, sociales, economicas para la consideración del proyecto, presupuesto actualizado) | 2d | 2023-03-14 | 2023-03-16 | 501 | 0d |  |  |
| 504 | 16.1.3.3 | **Reforma al PAP** | 4d | 2023-03-16 | 2023-03-22 |  | 3d |  |  |
| 505 | 16.1.3.3.1 | Reforma al PAP | 2d | 2023-03-16 | 2023-03-20 | 503 | 3d | 0d |  |
| 506 | 16.1.3.3.2 | Aprobación de PAP | 2d | 2023-03-20 | 2023-03-22 | 505 | 3d |  |  |
| 507 | 16.1.3.4 | **Aval jurídico** | 7d | 2023-03-16 | 2023-03-27 |  | 0d |  |  |
| 508 | 16.1.3.4.1 | Compilación del documento que sustenta (viablidad técnica, presupuesto actualizado e informe de necesidad) | 1d | 2023-03-16 | 2023-03-17 | 503 | 0d |  |  |
| 509 | 16.1.3.4.2 | Elaboración del borrador del convenio | 1d | 2023-03-17 | 2023-03-20 | 508 | 0d |  |  |
| 510 | 16.1.3.4.3 | Emisión de aval jurídico | 5d | 2023-03-20 | 2023-03-27 | 509 | 0d |  |  |
| 511 | 16.1.3.5 | **Autorización de gasto** | 2d | 2023-03-27 | 2023-03-29 |  | 0d |  |  |
| 512 | 16.1.3.5.1 | Compilación de (viablidad técnica, presupuesto actualizado, informe de necesidad y aval jurídico) Solicitud de Autorización de gasto para transferencia | 1d | 2023-03-27 | 2023-03-28 | 506, 510 | 0d |  |  |
| 513 | 16.1.3.5.2 | Emisión de autorización de gasto | 1d | 2023-03-28 | 2023-03-29 | 512 | 0d |  |  |

| ID | WBS | Task | Duration | Start | Finish | Predecessors | Total slack | Free slack | Constraint |
| --- | --- | --- | --- | --- | --- | --- | --- | --- | --- |
| 514 | 16.1.4 | **Firma de convenio validaciones externas** | 14d | 2023-03-27 | 2023-04-14 |  | 0d |  |  |
| 515 | 16.1.4.1 | **Aval del Ministerio de Finanzas y certificación presupuestaria** | 12d | 2023-03-29 | 2023-04-14 | 513 | 0d |  |  |
| 516 | 16.1.4.1.1 | Solicitud a CGPGE de certificación de recursos para el Ministerio de Finanzas | 1d | 2023-03-29 | 2023-03-30 | 513 | 0d |  |  |
| 517 | 16.1.4.1.2 | Elaboración de Solicitud de certificación presupuestaria al Ministerio de Finanzas | 1d | 2023-03-29 | 2023-03-30 | 513 | 0d |  |  |
| 518 | 16.1.4.1.3 | Despacho de Solicitud de certificación presupuestaria al Ministerio de Finanzas | 1d | 2023-03-30 | 2023-03-31 | 516, 517 | 0d |  |  |
| 519 | 16.1.4.1.4 | Respuesta de Ministerio de Finanzas sobre certificación presupuestaria | 9d | 2023-03-31 | 2023-04-13 | 518 | 0d |  |  |
| 520 | 16.1.4.1.5 | Certificación presupuestaria | 1d | 2023-04-13 | 2023-04-14 | 519 | 0d |  |  |
| 521 | 16.1.4.2 | **Acuerdo con GAD** | 10d | 2023-03-27 | 2023-04-10 |  | 4d |  |  |
| 522 | 16.1.4.2.1 | Negociacion de términos convenio con GAD (con base en borrador) | 5d | 2023-03-27 | 2023-04-03 | 510 | 4d | 0d |  |
| 523 | 16.1.4.2.2 | Recopilación de documentos hablitantes para firma (credenciales de los alcaldes, emisión de certificado de cuenta bancaria para transferencia, certificación presupuestaria de la contraparte financiera, certificación de aprobación de términos del convenio | 5d | 2023-04-03 | 2023-04-10 | 522 | 4d |  |  |
| 524 | 16.1.5 | **Firma convenio suscripción** | 7d | 2023-04-14 | 2023-04-25 |  | 0d |  |  |
| 525 | 16.1.5.1 | **Aval jurídico para firma de convenio** | 4d | 2023-04-14 | 2023-04-20 |  | 0d |  |  |
| 526 | 16.1.5.1.1 | Solicitud al jurídico de revisión de documentación hablitante del convenio (credenciales de los alcaldes, emisión de certificado de cuenta bancaria para transferencia, certificación presupuestaria de la contraparte financiera, certificación de aprobación | 1d | 2023-04-14 | 2023-04-17 | 520, 523 | 0d |  |  |
| 527 | 16.1.5.1.2 | Informe de procedencia para la firma del convenio | 1d | 2023-04-14 | 2023-04-17 | 520, 523 | 0d |  |  |
| 528 | 16.1.5.1.3 | Informe de jurídico para el Señor Ministro | 3d | 2023-04-17 | 2023-04-20 | 526, 527 | 0d |  |  |
| 529 | 16.1.5.2 | **Sucripción de convenio** | 3d | 2023-04-20 | 2023-04-25 |  | 0d |  |  |
| 530 | 16.1.5.2.1 | Firma del Señor Ministro | 2d | 2023-04-20 | 2023-04-24 | 528 | 0d |  |  |
| 531 | 16.1.5.2.2 | Firma del GAD | 1d | 2023-04-24 | 2023-04-25 | 530 | 0d |  |  |
| 532 | 16.1.6 | **Transferencia de recursos** | 10d | 2023-04-25 | 2023-05-09 |  | 0d |  |  |
| 533 | 16.1.6.1 | **Transferencia de recursos** | 10d | 2023-04-25 | 2023-05-09 |  | 0d |  |  |
| 534 | 16.1.6.1.1 | Solicitud de transferencia (certificario bancario GAD, decreto ejecutivo N°21, aprobación términos del convenio GAD, certificación presupuestaria GAD, certificación presupuestaria MAATE, convenio firmado por GAD y MAATE, credencial y cédula Alcalde GAD | 2d | 2023-04-25 | 2023-04-27 | 531 | 0d |  |  |
| 535 | 16.1.6.1.2 | Acreditación de Recursos | 8d | 2023-04-27 | 2023-05-09 | 534 | 0d |  |  |
| 536 | 16.2 | **Parte GAD** | 316d | 2023-05-09 | 2024-07-24 |  | 0d |  |  |
| 537 | 16.2.1 | **Ejecución del convenio obra** | 316d | 2023-05-09 | 2024-07-24 |  | 0d |  |  |
| 538 | 16.2.1.1 | **Etapa preparatoria obra** | 66d | 2023-05-09 | 2023-08-09 |  | 0d |  |  |
| 539 | 16.2.1.1.1 | Elaboración de los documentos habilitantes (informe necesidad, pliegos, presupuesto, TDR, certificación presupuestaria en torno al GAD) | 66d | 2023-05-09 | 2023-08-09 | 535 | 0d |  | start no earlier than 2023-05-09 |

| ID | WBS | Task | Type | Duration | Start | Finish | Predecessors | Total slack | Constraint |
| --- | --- | --- | --- | --- | --- | --- | --- | --- | --- |
| 540 | 16.2.1.2 | **Etapa precontractual obra** |  | 20d | 2023-08-09 | 2023-09-06 |  | 0d |  |
| 541 | 16.2.1.2.1 | Proceso pre adjudicial (subida al portal hasta calificación) |  | 10d | 2023-08-09 | 2023-08-23 | 539 | 0d |  |
| 542 | 16.2.1.2.2 | Adjudicación |  | 10d | 2023-08-23 | 2023-09-06 | 541 | 0d |  |
| 543 | 16.2.1.3 | **Ejecución de obra** |  | 230d | 2023-09-06 | 2024-07-24 |  | 0d |  |
| 544 | 16.2.1.3.1 | Firma del contrato, Anticipo |  | 15d | 2023-09-06 | 2023-09-27 | 542 | 0d |  |
| 545 | 16.2.1.3.2 | Etapa 1 |  | 20d | 2023-09-27 | 2023-10-25 | 544 | 0d |  |
| 546 | 16.2.1.3.3 | Etapa 2 |  | 20d | 2023-10-25 | 2023-11-22 | 545 | 0d |  |
| 547 | 16.2.1.3.4 | Etapa 3 |  | 20d | 2023-11-22 | 2023-12-20 | 546 | 0d |  |
| 548 | 16.2.1.3.5 | Etapa 4 |  | 20d | 2023-12-20 | 2024-01-17 | 547 | 0d |  |
| 549 | 16.2.1.3.6 | Solicitud de revision de Obra Finalizada y Firma de Acta entrega recepción provisional | milestone | 15d | 2024-01-17 | 2024-02-07 | 548 | 0d |  |
| 550 | 16.2.1.3.7 | Cumplimiento del correcto funcionamiento del proyecto y Firma de Acta entrega recepción definitiva |  | 120d | 2024-02-07 | 2024-07-24 | 549 | 0d |  |
| 551 | 16.2.1.4 | **Etapa preparatoria fiscalización** |  | 66d | 2023-05-09 | 2023-08-09 |  | 0d |  |
| 552 | 16.2.1.4.1 | Elaboración de los documentos habilitantes (informe necesidad, pliegos, presupuesto, TDR, certificación presupuestaria en torno al GAD) |  | 66d | 2023-05-09 | 2023-08-09 | 535 | 0d | start no earlier than 2023-05-09 |
| 553 | 16.2.1.5 | **Etapa precontractual fiscalización** |  | 20d | 2023-08-09 | 2023-09-06 |  | 0d |  |
| 554 | 16.2.1.5.1 | Proceso pre adjudicial (subida al portal hasta calificación) |  | 10d | 2023-08-09 | 2023-08-23 | 552 | 0d |  |
| 555 | 16.2.1.5.2 | Adjudicación |  | 10d | 2023-08-23 | 2023-09-06 | 554 | 0d |  |
| 556 | 16.2.1.6 | **Ejecución de fiscalización** |  | 230d | 2023-09-06 | 2024-07-24 |  | 0d |  |
| 557 | 16.2.1.6.1 | Firma del contrato, Anticipo |  | 15d | 2023-09-06 | 2023-09-27 | 555 | 0d |  |
| 558 | 16.2.1.6.2 | Etapa 1 |  | 20d | 2023-09-27 | 2023-10-25 | 557 | 0d |  |
| 559 | 16.2.1.6.3 | Etapa 2 |  | 20d | 2023-10-25 | 2023-11-22 | 558 | 0d |  |
| 560 | 16.2.1.6.4 | Etapa 3 |  | 20d | 2023-11-22 | 2023-12-20 | 559 | 0d |  |
| 561 | 16.2.1.6.5 | Etapa 4 |  | 20d | 2023-12-20 | 2024-01-17 | 560 | 0d |  |
| 562 | 16.2.1.6.6 | Solicitud de revision de Obra Finalizada y Firma de Acta entrega recepción provisional | milestone | 15d | 2024-01-17 | 2024-02-07 | 561 | 0d |  |
| 563 | 16.2.1.6.7 | Cumplimiento del correcto funcionamiento del proyecto y Firma de Acta entrega recepción definitiva |  | 120d | 2024-02-07 | 2024-07-24 | 562 | 0d |  |
